# WBS-CPS-6-18-2018

Schedule from MS Project, 2018-02-27 to 2018-08-30, costs in $, A marks actual dates.

## Calendars

- C2: Mon-Tue off; Wed-Thu 08:00-12:00, 13:00-17:00; Fri-Sun off.

## Resources

| Resource | Rate |
| --- | --- |
| parand | 10 |
| soroush | 10 |
| kossar | 10 |
| team | 30 |

## Schedule

| ID | WBS | Task | Duration | Start | Finish | Predecessors | Complete | Resources | Work | Actual work | Cost | Actual cost | تاریخ شروع | تاریخ پایان |
| --- | --- | --- | --- | --- | --- | --- | --- | --- | --- | --- | --- | --- | --- | --- |
| 1 | 1 | **فاز صفر: ارائه پیشنهادنامه** | 2d | 2018-02-27 08:00 A | 2018-03-05 09:30 A |  | 100% |  | 27.5h | 27.5h | 371.67 | 371.67 |  |  |
| 2 | 1.1 | برگزاری جلسه‌ی هم‌فکری | 0.5d | 2018-02-27 08:00 A | 2018-02-27 12:00 A |  | 100% | team | 4h | 4h | 120 | 120 | 1396/12/8 | 1396/12/8 |
| 3 | 1.2 | **نگارش پیشنهادنامه** | 2d | 2018-02-27 08:00 A | 2018-03-05 09:30 A | 2 | 100% |  | 23.5h | 23.5h | 235 | 235 |  |  |
| 4 | 1.2.1 | اهداف و توجیه | 0.19d | 2018-02-28 08:00 A | 2018-02-28 09:30 A |  | 100% | kossar | 4h | 4h | 40 | 40 | 1396/12/9 | 1396/12/9 |
| 5 | 1.2.2 | معرفی و مفاد قرارداد | 0.19d | 2018-02-28 08:00 A | 2018-02-28 09:30 A |  | 100% | kossar | 1.5h | 1.5h | 15 | 15 | 1396/12/9 | 1396/12/9 |
| 6 | 1.2.3 | **معرفی سیستم و توضیح تکنولوژی** | 0.12d | 2018-02-27 08:00 A | 2018-02-28 09:00 A |  | 100% |  | 4.5h | 4.5h | 45 | 45 |  |  |
| 7 | 1.2.3.1 | تهیه گزینه راه‌حل‌های تکنولوژی | 0.19d | 2018-02-27 08:00 A | 2018-02-27 09:30 A |  | 100% | soroush | 1.5h | 1.5h | 15 | 15 | 1396/12/8 | 1396/12/8 |
| 8 | 1.2.3.2 | امکان سنجی گزینه‌ها | 0.25d | 2018-02-27 08:00 A | 2018-02-27 10:00 A | 7 | 100% | soroush | 2h | 2h | 20 | 20 | 1396/12/8 | 1396/12/8 |
| 9 | 1.2.3.3 | انتخاب گزینه راه حل نهایی | 0.12d | 2018-02-28 08:00 A | 2018-02-28 09:00 A | 8 | 100% | soroush | 1h | 1h | 10 | 10 | 1396/12/9 | 1396/12/9 |
| 10 | 1.2.4 | **پوشش نیازمندی‌های کارکردی و غیرکارکردی** | 1.19d | 2018-02-28 08:00 A | 2018-03-01 09:30 A |  | 100% |  | 3h | 3h | 30 | 30 |  |  |
| 11 | 1.2.4.1 | نیازمندی‌های کارکردی | 0.19d | 2018-02-28 08:00 A | 2018-02-28 09:30 A |  | 100% | kossar | 1.5h | 1.5h | 15 | 15 | 1396/12/9 | 1396/12/9 |
| 12 | 1.2.4.2 | نیازمندی‌های غیرکارکردی | 0.19d | 2018-03-01 08:00 A | 2018-03-01 09:30 A |  | 100% | soroush | 1.5h | 1.5h | 15 | 15 | 1396/12/10 | 1396/12/10 |
| 13 | 1.2.5 | **برآورد زمانی** | 0.19d | 2018-03-01 08:00 A | 2018-03-01 09:30 A |  | 100% |  | 2.5h | 2.5h | 25 | 25 |  |  |
| 14 | 1.2.5.1 | برآورد زمانی | 0.19d | 2018-03-01 08:00 A | 2018-03-01 09:30 A |  | 100% | parand | 1.5h | 1.5h | 15 | 15 | 1396/12/10 | 1396/12/10 |
| 15 | 1.2.5.2 | تحلیل زمانی net present value | 0.12d | 2018-03-01 08:00 A | 2018-03-01 09:00 A | 14 | 100% | parand | 1h | 1h | 10 | 10 | 1396/12/10 | 1396/12/10 |
| 16 | 1.2.6 | برآورد مالی | 0.5d | 2018-03-02 08:00 A | 2018-03-02 12:00 A | 13 | 100% | parand | 4h | 4h | 40 | 40 | 1396/12/11 | 1396/12/11 |
| 17 | 1.2.7 | مراحل اجرای پروژه | 0.12d | 2018-03-02 08:00 A | 2018-03-02 09:00 A | 13 | 100% | soroush | 1h | 1h | 10 | 10 | 1396/12/11 | 1396/12/11 |
| 18 | 1.2.8 | معرفی اعضای گروه | 0.19d | 2018-03-02 08:00 A | 2018-03-02 09:30 A |  | 100% | parand | 1.5h | 1.5h | 15 | 15 | 1396/12/11 | 1396/12/11 |
| 19 | 1.2.9 | بیان نمرات اضافی | 0.19d | 2018-03-03 08:00 A | 2018-03-05 09:30 A |  | 100% | parand | 1.5h | 1.5h | 15 | 15 | 1396/12/12 | 1396/12/14 |
| 20 | 1.3 | **ارسال پروپوزال** | 0d | 2018-03-03 08:00 A | 2018-03-04 17:00 A | 3 | 100% |  |  |  | 16.67 | 16.67 |  |  |
| 21 | 1.3.1 | بازبینی و ویرایش | 0.19d | 2018-03-03 08:00 A | 2018-03-04 17:00 A |  | 100% | soroush |  |  | 15 | 15 | 1396/12/12 | 1396/12/13 |
| 22 | 1.3.2 | ارسال نسخه نهایی | 0.02d | 2018-03-03 08:00 A | 2018-03-04 17:00 A | 21 | 100% | soroush |  |  | 1.67 | 1.67 | 1396/12/12 | 1396/12/13 |
| 23 | 2 | **فاز یک: تحلیل ساختار شکست کار** | 3.39d | 2018-03-05 08:00 A | 2018-03-15 11:05 A | 1 | 100% |  | 36.42h | 36.42h | 437.5 | 437.5 |  |  |
| 24 | 2.1 | جلسه هم‌فکری و تقسیم کار | 0.46d | 2018-03-05 08:00 A | 2018-03-05 11:40 A |  | 100% | team | 3.67h | 3.67h | 110 | 110 | 1396/12/14 | 1396/12/14 |

| ID | WBS | Task | Duration | Start | Finish | Predecessors | Complete | Resources | Work | Actual work | Cost | Actual cost | تاریخ شروع | تاریخ پایان |
| --- | --- | --- | --- | --- | --- | --- | --- | --- | --- | --- | --- | --- | --- | --- |
| 25 | 2.2 | **تهیه نسخه اولیه ساختار شکست فاز صفر** | 0.85d | 2018-03-14 11:40 A | 2018-03-15 10:30 A | 24 | 100% |  | 6.33h | 6.33h | 63.33 | 63.33 |  |  |
| 26 | 2.2.1 | تعیین task های سطح اول | 0.04d | 2018-03-14 11:40 A | 2018-03-14 12:00 A |  | 100% | kossar | 0.33h | 0.33h | 3.33 | 3.33 | 1396/12/23 | 1396/12/23 |
| 27 | 2.2.2 | تعیین task های سطح دوم | 0.06d | 2018-03-14 12:10 A | 2018-03-14 13:30 A | 26 | 100% | kossar | 0.5h | 0.5h | 5 | 5 | 1396/12/23 | 1396/12/23 |
| 28 | 2.2.3 | تعیین task های سطح سوم | 0.02d | 2018-03-14 13:00 A | 2018-03-14 13:10 A | 27 | 100% | kossar | 0.17h | 0.17h | 1.67 | 1.67 | 1396/12/23 | 1396/12/23 |
| 29 | 2.2.4 | تعیین وابستگی‌ها | 0.06d | 2018-03-14 13:10 A | 2018-03-14 13:40 A | 28 | 100% | soroush | 0.5h | 0.5h | 5 | 5 | 1396/12/23 | 1396/12/23 |
| 30 | 2.2.5 | زمان‌بندی و اختصاص منابع | 0.6d | 2018-03-14 13:40 A | 2018-03-15 10:30 A | 29 | 100% | parand | 4.83h | 4.83h | 48.33 | 48.33 | 1396/12/23 | 1396/12/24 |
| 31 | 2.3 | **تهیه نسخه اولیه ساختار شکست فاز یک** | 0.93d | 2018-03-14 11:40 A | 2018-03-15 11:05 A | 24 | 100% |  | 6.5h | 6.5h | 65 | 65 |  |  |
| 32 | 2.3.1 | تعیین task های سطح اول | 0.03d | 2018-03-14 11:40 A | 2018-03-14 11:55 A |  | 100% | kossar | 0.25h | 0.25h | 2.5 | 2.5 | 1396/12/23 | 1396/12/23 |
| 33 | 2.3.2 | تعیین task های سطح دوم | 0.01d | 2018-03-14 11:55 A | 2018-03-14 12:00 A | 32 | 100% | kossar | 0.08h | 0.08h | 0.83 | 0.83 | 1396/12/23 | 1396/12/23 |
| 34 | 2.3.3 | تعیین task های سطح سوم | 0.02d | 2018-03-14 12:15 A | 2018-03-14 13:10 A | 33 | 100% | kossar | 0.17h | 0.17h | 1.67 | 1.67 | 1396/12/23 | 1396/12/23 |
| 35 | 2.3.4 | تعیین وابستگی‌ها | 0.06d | 2018-03-14 12:25 A | 2018-03-14 13:30 A | 34 | 100% | soroush | 0.5h | 0.5h | 5 | 5 | 1396/12/23 | 1396/12/23 |
| 36 | 2.3.5 | زمان‌بندی و اختصاص منابع | 0.69d | 2018-03-14 13:30 A | 2018-03-15 11:05 A | 35 | 100% | soroush | 5.5h | 5.5h | 55 | 55 | 1396/12/23 | 1396/12/24 |
| 37 | 2.4 | **تهیه نسخه اولیه ساختار شکست فاز دو** | 0.93d | 2018-03-14 11:40 A | 2018-03-15 11:05 A | 24 | 100% |  | 6.5h | 6.5h | 65 | 65 |  |  |
| 38 | 2.4.1 | تعیین task های سطح اول | 0.03d | 2018-03-14 11:40 A | 2018-03-14 11:55 A |  | 100% | kossar | 0.25h | 0.25h | 2.5 | 2.5 | 1396/12/23 | 1396/12/23 |
| 39 | 2.4.2 | تعیین task های سطح دوم | 0.01d | 2018-03-14 11:55 A | 2018-03-14 12:00 A | 38 | 100% | parand | 0.08h | 0.08h | 0.83 | 0.83 | 1396/12/23 | 1396/12/23 |
| 40 | 2.4.3 | تعیین task های سطح سوم | 0.02d | 2018-03-14 12:15 A | 2018-03-14 13:10 A | 39 | 100% | parand | 0.17h | 0.17h | 1.67 | 1.67 | 1396/12/23 | 1396/12/23 |
| 41 | 2.4.4 | تعیین وابستگی‌ها | 0.06d | 2018-03-14 12:25 A | 2018-03-14 13:30 A | 40 | 100% | soroush | 0.5h | 0.5h | 5 | 5 | 1396/12/23 | 1396/12/23 |
| 42 | 2.4.5 | زمان‌بندی و اختصاص منابع | 0.69d | 2018-03-14 13:30 A | 2018-03-15 11:05 A | 41 | 100% | soroush | 5.5h | 5.5h | 55 | 55 | 1396/12/23 | 1396/12/24 |
| 43 | 2.5 | **تهیه نسخه اولیه ساختار شکست فاز سه** | 0.93d | 2018-03-14 11:40 A | 2018-03-15 11:05 A | 24 | 100% |  | 6.75h | 6.75h | 67.5 | 67.5 |  |  |
| 44 | 2.5.1 | تعیین task های سطح اول | 0.03d | 2018-03-14 11:40 A | 2018-03-14 11:55 A |  | 100% | parand | 0.25h | 0.25h | 2.5 | 2.5 | 1396/12/23 | 1396/12/23 |
| 45 | 2.5.2 | تعیین task های سطح دوم | 0.02d | 2018-03-14 11:55 A | 2018-03-14 13:05 A | 44 | 100% | parand | 0.17h | 0.17h | 1.67 | 1.67 | 1396/12/23 | 1396/12/23 |
| 46 | 2.5.3 | تعیین task های سطح سوم | 0.04d | 2018-03-14 12:15 A | 2018-03-14 13:20 A | 45 | 100% | parand | 0.33h | 0.33h | 3.33 | 3.33 | 1396/12/23 | 1396/12/23 |
| 47 | 2.5.4 | تعیین وابستگی‌ها | 0.06d | 2018-03-14 12:25 A | 2018-03-14 13:30 A | 46 | 100% | soroush | 0.5h | 0.5h | 5 | 5 | 1396/12/23 | 1396/12/23 |
| 48 | 2.5.5 | زمان‌بندی و اختصاص منابع | 0.69d | 2018-03-14 13:30 A | 2018-03-15 11:05 A | 47 | 100% | soroush | 5.5h | 5.5h | 55 | 55 | 1396/12/23 | 1396/12/24 |

| ID | WBS | Task | Duration | Start | Finish | Predecessors | Complete | Constraint | Resources | Work | Actual work | Cost | Actual cost | تاریخ شروع | تاریخ پایان |
| --- | --- | --- | --- | --- | --- | --- | --- | --- | --- | --- | --- | --- | --- | --- | --- |
| 49 | 2.6 | **تهیه نسخه اولیه ساختار شکست فاز چهار** | 0.93d | 2018-03-14 11:40 A | 2018-03-15 11:05 A | 24 | 100% |  |  | 6.67h | 6.67h | 66.67 | 66.67 |  |  |
| 50 | 2.6.1 | تعیین task های سطح اول | 0.03d | 2018-03-14 11:40 A | 2018-03-14 11:55 A |  | 100% |  | parand | 0.25h | 0.25h | 2.5 | 2.5 | 1396/12/23 | 1396/12/23 |
| 51 | 2.6.2 | تعیین task های سطح دوم | 0.03d | 2018-03-14 11:55 A | 2018-03-14 13:10 A | 50 | 100% |  | parand | 0.25h | 0.25h | 2.5 | 2.5 | 1396/12/23 | 1396/12/23 |
| 52 | 2.6.3 | تعیین task های سطح سوم | 0.02d | 2018-03-14 12:15 A | 2018-03-14 13:10 A | 51 | 100% |  | kossar | 0.17h | 0.17h | 1.67 | 1.67 | 1396/12/23 | 1396/12/23 |
| 53 | 2.6.4 | تعیین وابستگی‌ها | 0.06d | 2018-03-14 12:25 A | 2018-03-14 13:30 A | 52 | 100% |  | soroush | 0.5h | 0.5h | 5 | 5 | 1396/12/23 | 1396/12/23 |
| 54 | 2.6.5 | زمان‌بندی و اختصاص منابع | 0.69d | 2018-03-14 13:30 A | 2018-03-15 11:05 A | 53 | 100% |  | soroush | 5.5h | 5.5h | 55 | 55 | 1396/12/23 | 1396/12/24 |
| 55 | 3 | **فاز دو: تحلیل اولیه مورد‌های کاربردی و سناریوهای تست‌ها** | 4d | 2018-04-18 08:00 A | 2018-04-30 10:30 A | 23 | 100% |  |  | 81.6h | 81.6h | 1,036 | 1,036 |  |  |
| 56 | 3.1 | جلسه هم‌فکری و تقسیم کار | 1d | 2018-04-18 08:00 A | 2018-04-18 17:00 A |  | 100% |  | team | 8h | 8h | 240 | 240 | 1397/1/29 | 1397/1/29 |
| 57 | 3.2 | **تهیه نسخه اولیه موارد کاربردی** | 2d | 2018-04-18 08:00 A | 2018-04-23 17:00 A | 56 | 100% |  |  | 21.6h | 21.6h | 216 | 216 |  |  |
| 58 | 3.2.1 | شناسایی actor ها | 1d | 2018-04-18 08:00 A | 2018-04-18 17:00 A |  | 100% |  | kossar | 8h | 8h | 80 | 80 | 1397/1/29 | 1397/1/29 |
| 59 | 3.2.2 | بازنگری و نهایی کردن actorها | 0.2d | 2018-04-19 08:00 A | 2018-04-19 09:36 A | 58 | 100% |  | parand | 1.6h | 1.6h | 16 | 16 | 1397/1/30 | 1397/1/30 |
| 60 | 3.2.3 | شناسایی موارد کاریردی از روی نیازمندی‌های کاربردی | 0.5d | 2018-04-19 08:00 A | 2018-04-19 12:00 A | 58 | 100% |  | kossar | 4h | 4h | 40 | 40 | 1397/1/30 | 1397/1/30 |
| 61 | 3.2.4 | ثبت گرافیکی موارد کاربردی و تهیه usecase diagram | 1d | 2018-04-23 08:00 A | 2018-04-23 17:00 A | 60 | 100% | start no earlier than 2018-04-23 08:00 | kossar | 8h | 8h | 80 | 80 | 1397/2/3 | 1397/2/3 |
| 62 | 3.3 | **تهیه نسخه اولیه سناریوهای تست** | 2d | 2018-04-20 08:00 A | 2018-04-27 17:00 A |  | 100% |  |  | 48h | 48h | 480 | 480 |  |  |
| 63 | 3.3.1 | نوشتن تست اولیه با selenium - آموزشی | 1d | 2018-04-23 08:00 A | 2018-04-23 17:00 A |  | 100% | start no earlier than 2018-04-23 08:00 | soroush | 8h | 8h | 80 | 80 | 1397/2/3 | 1397/2/3 |
| 64 | 3.3.2 | نوشتن ui اولیه - آموزشی | 2d | 2018-04-20 08:00 A | 2018-04-23 17:00 A |  | 100% | start no earlier than 2018-04-20 08:00 | parand | 16h | 16h | 160 | 160 | 1397/1/31 | 1397/2/3 |
| 65 | 3.3.3 | پیاده سازی تست در جنگو با selenium | 2d | 2018-04-26 08:00 A | 2018-04-27 17:00 A | 56, 63 | 100% | start no earlier than 2018-04-26 08:00 | soroush | 16h | 16h | 160 | 160 | 1397/2/6 | 1397/2/7 |
| 66 | 3.3.4 | پیاده سازی UI | 1d | 2018-04-26 08:00 A | 2018-04-26 17:00 A | 56, 64 | 100% | start no earlier than 2018-04-26 08:00 | parand | 8h | 8h | 80 | 80 | 1397/2/6 | 1397/2/6 |
| 67 | 3.4 | **ارسال خروجی** | 0d | 2018-04-30 08:00 A | 2018-04-30 10:30 A |  | 100% |  |  | 4h | 4h | 100 | 100 |  |  |
| 68 | 3.4.1 | **بازبینی و ویرایش** | 0d | 2018-04-30 08:00 A | 2018-04-30 09:30 A | 62, 57 | 100% |  |  | 3h | 3h | 90 | 90 |  |  |
| 69 | 3.4.1.1 | بازبینی و ویرایش موارد کاربردی | 0.19d | 2018-04-30 08:00 A | 2018-04-30 09:30 A | 57 | 100% | start no earlier than 2018-04-26 08:00 | team | 1.5h | 1.5h | 45 | 45 | 1397/2/10 | 1397/2/10 |
| 70 | 3.4.1.2 | بازبینی و ویرایش سناریوهای تست | 0.19d | 2018-04-30 08:00 A | 2018-04-30 09:30 A | 62 | 100% |  | team | 1.5h | 1.5h | 45 | 45 | 1397/2/10 | 1397/2/10 |
| 71 | 3.4.2 | ارسال | 1h | 2018-04-30 09:30 A | 2018-04-30 10:30 A | 68 | 100% | start no earlier than 2018-04-30 08:00 | soroush | 1h | 1h | 10 | 10 | 1397/2/10 | 1397/2/10 |
| 72 | 4 | **فاز سه: تکمیل موردهای کاربردی و سناریوهای تست** | 14d | 2018-05-02 08:00 A | 2018-06-18 11:20 A | 55 | 100% |  |  | 189.33h | 189.33h | 1,953.33 | 1,953.33 |  |  |
| 73 | 4.1 | جلسه بررسی بازخورد کارفرما نسبت به موارد کاربردی و سناریوهای تست | 0.12d | 2018-05-02 08:00 A | 2018-05-02 09:00 A |  | 100% |  |  |  |  |  |  | 1397/2/12 | 1397/2/12 |

| ID | WBS | Task | Type | Duration | Start | Finish | Predecessors | Complete | Actual finish | Total slack | Free slack | Constraint | Resources | Work | Actual work | Cost | Actual cost | تاریخ شروع | تاریخ پایان |
| --- | --- | --- | --- | --- | --- | --- | --- | --- | --- | --- | --- | --- | --- | --- | --- | --- | --- | --- | --- |
| 74 | 4.2 | **بازبینی موارد کاربردی** |  | 1.88d | 2018-05-02 09:00 A | 2018-05-07 11:00 A | 73 | 100% |  |  |  |  |  | 9h | 9h | 150 | 150 |  |  |
| 75 | 4.2.1 | اصلاح موارد مورد اختلاف با کارفرما |  | 0.38d | 2018-05-02 09:00 A | 2018-05-02 12:00 A |  | 100% |  |  |  |  | team | 3h | 3h | 90 | 90 | 1397/2/12 | 1397/2/12 |
| 76 | 4.2.2 | اضافه کردن موارد جا افتاده |  | 0.38d | 2018-05-04 14:00 A | 2018-05-04 17:00 A | 75 | 100% |  |  |  |  | kossar | 3h | 3h | 30 | 30 | 1397/2/14 | 1397/2/14 |
| 77 | 4.2.3 | حذف موارد اضافی |  | 0.38d | 2018-05-07 08:00 A | 2018-05-07 11:00 A | 76 | 100% |  |  |  |  | kossar | 3h | 3h | 30 | 30 | 1397/2/17 | 1397/2/17 |
| 78 | 4.3 | **تکمیل موارد کاربردی** |  | 6d | 2018-05-11 08:00 A | 2018-06-01 17:00 A | 74 | 100% |  |  |  |  |  | 39h | 39h | 390 | 390 |  |  |
| 79 | 4.3.1 | انتقال دانش نوشتن موارد کاربردی |  | 3h | 2018-05-11 08:00 A | 2018-05-11 16:00 A |  | 100% |  |  |  | start no earlier than 2018-05-11 08:00 | kossar; soroush | 3h | 3h | 30 | 30 | 1397/2/21 | 1397/2/21 |
| 80 | 4.3.2 | انتقال دانش نوشتن تست |  | 4h | 2018-05-11 08:00 A | 2018-05-11 12:00 A |  | 100% |  |  |  | start no earlier than 2018-05-11 08:00 | soroush; parand; kossar | 12h | 12h | 120 | 120 | 1397/2/21 | 1397/2/21 |
| 81 | 4.3.3 | نوشتن موارد کاربردی مشتری |  | 1d | 2018-05-24 08:00 A | 2018-05-28 17:00 A | 79 | 100% |  |  |  | start no earlier than 2018-05-24 08:00 | kossar | 8h | 8h | 80 | 80 | 1397/3/3 | 1397/3/7 |
| 82 | 4.3.4 | نوشتن موارد کاربردی مدیر |  | 1d | 2018-05-24 08:00 A | 2018-05-31 17:00 A | 79 | 100% |  |  |  | start no earlier than 2018-05-24 08:00 | soroush | 8h | 8h | 80 | 80 | 1397/3/3 | 1397/3/10 |
| 83 | 4.3.5 | نوشتن موارد کاربردی کارمند |  | 1d | 2018-05-24 08:00 A | 2018-06-01 17:00 A | 79 | 100% |  |  |  | start no earlier than 2018-05-24 08:00 | parand | 8h | 8h | 80 | 80 | 1397/3/3 | 1397/3/11 |
| 84 | 4.4 | **نوشتن سناریوهای تست** |  | 4d | 2018-06-04 08:00 A | 2018-06-12 17:00 | 78 | 100% | 2018-06-11 17:00 |  |  |  |  | 136h | 136h | 1,360 | 1,360 |  |  |
| 85 | 4.4.1 | نوشتن تست های مشتری | manual | 2d | 2018-06-07 08:00 A | 2018-06-08 17:00 A | 80 | 100% |  |  |  |  | soroush | 16h | 16h | 160 | 160 | 1397/3/17 | 1397/3/18 |
| 86 | 4.4.2 | نوشتن تست های مدیر | manual | 2d | 2018-06-07 08:00 A | 2018-06-11 17:00 A | 80 | 100% |  |  |  |  | parand | 24h | 24h | 240 | 240 | 1397/3/17 | 1397/3/21 |
| 87 | 4.4.3 | نوشتن تست های سیستم | manual | 2d | 2018-06-07 08:00 A | 2018-06-11 17:00 A | 80 | 100% |  |  |  |  | kossar | 24h | 24h | 240 | 240 | 1397/3/17 | 1397/3/21 |
| 88 | 4.4.4 | نوشتن تست های کارمند | manual | 2d | 2018-06-04 08:00 A | 2018-06-05 17:00 A | 80 | 100% |  |  |  |  | kossar | 16h | 16h | 160 | 160 | 1397/3/16 | 1397/3/17 |
| 89 | 4.4.5 | طراحی ui پنل مدیر | manual | 2d | 2018-06-04 08:00 A | 2018-06-06 17:00 A |  | 100% |  |  |  |  | soroush | 24h | 24h | 240 | 240 | 1397/3/16 | 1397/3/18 |
| 90 | 4.4.6 | طراحی ui پنل مشتری | manual | 2d | 2018-06-04 08:00 A | 2018-06-06 17:00 A |  | 100% |  |  |  |  | parand | 24h | 24h | 240 | 240 | 1397/3/16 | 1397/3/18 |
| 91 | 4.4.7 | طراحی پنل کارمند | manual | 1d | 2018-06-07 08:00 A | 2018-06-07 17:00 A | 89 | 100% |  |  |  |  | kossar | 8h | 8h | 80 | 80 | 1397/3/17 | 1397/3/17 |
| 92 | 4.5 | **ویرایش و ارسال** |  | 0.42d | 2018-06-18 08:00 A | 2018-06-18 11:20 A | 74, 84 | 100% |  |  |  |  |  | 5.33h | 5.33h | 53.33 | 53.33 |  |  |
| 93 | 4.5.1 | گذاشتن دیاگرام موارد کاربردی پایانی |  | 2h | 2018-06-18 08:00 A | 2018-06-18 10:00 A |  | 100% |  |  |  |  | kossar | 2h | 2h | 20 | 20 | 1397/3/28 | 1397/3/28 |
| 94 | 4.5.2 | بازبینی و ویرایش نسخه نهایی موارد کاربردی و سناریوهای تست |  | 0.38d | 2018-06-18 08:00 A | 2018-06-18 11:00 A |  | 100% |  |  |  |  | soroush | 3h | 3h | 30 | 30 | 1397/3/28 | 1397/3/28 |
| 95 | 4.5.3 | ارسال خروجی |  | 0.04d | 2018-06-18 11:00 A | 2018-06-18 11:20 A | 94 | 100% |  |  |  |  | soroush | 0.33h | 0.33h | 3.33 | 3.33 | 1397/3/28 | 1397/3/28 |
| 96 | 5 | **فاز چهارم پروژه** |  | 21d | 2018-06-25 08:00 | 2018-08-30 17:00 | 72 |  |  |  |  |  |  | 279h |  | 3,290 |  |  |  |
| 97 | 5.1 | **طراحی پایگاه داده** |  | 0.25d | 2018-06-25 08:00 | 2018-06-27 10:00 |  |  |  | 10d | 0d |  |  | 18h |  | 180 |  |  |  |
| 98 | 5.1.1 | طراحی پایگاه داده اولیه در قالب ERD |  | 8h | 2018-06-25 08:00 | 2018-06-25 17:00 |  |  |  | 10d | 0d |  | kossar | 8h |  | 80 |  | 1397/4/4 | 1397/4/4 |
| 99 | 5.1.2 | جلسه بررسی تطابق طراحی با نیازمندی ها |  | 2h | 2018-06-26 08:00 | 2018-06-26 10:00 | 98 |  |  | 10.25d | 0d | start no earlier than 2018-03-15 08:00 | parand | 2h |  | 20 |  | 1397/4/5 | 1397/4/5 |
| 100 | 5.1.3 | طراحی مجدد جداول براساس فیدبک جلسه تطابق |  | 5h | 2018-06-26 10:00 | 2018-06-26 16:00 | 99 |  |  | 10.5d | 0d |  | kossar | 5h |  | 50 |  | 1397/4/5 | 1397/4/5 |
| 101 | 5.1.4 | نرمال سازی جداول تا 3nf |  | 3h | 2018-06-26 16:00 | 2018-06-27 10:00 | 100 |  |  | 11.12d |  |  | parand | 3h |  | 30 |  | 1397/4/5 | 1397/4/6 |

| ID | WBS | Task | Duration | Start | Finish | Predecessors | Total slack | Free slack | Resources | Work | Cost | تاریخ شروع | تاریخ پایان |
| --- | --- | --- | --- | --- | --- | --- | --- | --- | --- | --- | --- | --- | --- |
| 102 | 5.2 | **پیاده سازی** | 7d | 2018-06-27 10:00 | 2018-07-19 10:00 | 97 | 10d | 4.75d |  | 196h | 1,960 |  |  |
| 103 | 5.2.1 | **امکان ثبت نام/ورود/خروج در سیستم** | 3.12d | 2018-06-27 10:00 | 2018-07-05 11:00 | 97 | 10.62d | 0d |  | 13h | 130 |  |  |
| 104 | 5.2.1.1 | آماده شدن مدل اولیه کاربر طبق نمودار ER | 3h | 2018-06-27 10:00 | 2018-06-27 14:00 |  | 11.25d | 0d |  |  |  | 1397/4/6 | 1397/4/6 |
| 105 | 5.2.1.2 | امکان ثبت نام | 5h | 2018-06-28 09:00 | 2018-06-28 15:00 | 104 | 10.25d | 0d | soroush | 5h | 50 | 1397/4/7 | 1397/4/7 |
| 106 | 5.2.1.3 | امکان مشاهده اطلاعات شخصی خود در پنل شخصی | 3h | 2018-06-29 15:00 | 2018-07-03 16:00 | 104 | 11.25d |  | soroush | 3h | 30 | 1397/4/8 | 1397/4/12 |
| 107 | 5.2.1.4 | امکان ورود به سیستم | 3h | 2018-07-03 16:00 | 2018-07-04 10:00 | 105 | 11.75d | 0d | soroush | 3h | 30 | 1397/4/12 | 1397/4/13 |
| 108 | 5.2.1.5 | امکان خروج از سیستم | 2h | 2018-07-04 10:00 | 2018-07-05 11:00 | 107 | 10.62d |  | soroush | 2h | 20 | 1397/4/13 | 1397/4/14 |
| 109 | 5.2.2 | امکان ویرایش اطلاعات شخصی توسط کاربر | 5h | 2018-07-05 11:00 | 2018-07-05 17:00 | 103 | 13.25d |  | kossar | 5h | 50 | 1397/4/14 | 1397/4/14 |
| 110 | 5.2.3 | **مدیریت اعضای سامانه در پنل مدیریت** | 1d | 2018-06-28 08:00 | 2018-06-29 12:00 | 104 | 15d |  |  | 12h | 120 |  |  |
| 111 | 5.2.3.1 | اضافه کردن کارمند توسط مدیر | 1h | 2018-06-28 11:00 | 2018-06-28 12:00 |  | 15.75d |  | parand | 1h | 10 | 1397/4/7 | 1397/4/7 |
| 112 | 5.2.3.2 | مشاهده کاربران بر اساس سطح دسترسی | 5h | 2018-06-28 08:00 | 2018-06-28 15:00 |  | 14.75d | 0d | parand | 5h | 50 | 1397/4/7 | 1397/4/7 |
| 113 | 5.2.3.3 | مشاهده اطلاعات شخصی یک کاربر در پنل ریویو | 3h | 2018-06-28 15:00 | 2018-06-29 09:00 | 112 | 14.75d | 0d | parand | 3h | 30 | 1397/4/7 | 1397/4/8 |
| 114 | 5.2.3.4 | امکان مسدود کردن کاربران سیستم | 3h | 2018-06-29 09:00 | 2018-06-29 12:00 | 113 | 14.88d |  | parand | 3h | 30 | 1397/4/8 | 1397/4/8 |
| 115 | 5.2.4 | **ساخت کیف پول برای اعضای سیستم** | 0.25d | 2018-06-28 15:00 | 2018-07-03 10:00 | 105 | 14d | 0d |  | 18h | 180 |  |  |
| 116 | 5.2.4.1 | اضافه شدن مدل های کیف پول بر نمودار جدول ER | 5h | 2018-06-28 15:00 | 2018-06-29 11:00 |  | 14d | 0d | soroush | 5h | 50 | 1397/4/7 | 1397/4/8 |
| 117 | 5.2.4.2 | ساخته شدن کیف پول به هنگام ثبت نام کاربر | 3h | 2018-07-02 08:00 | 2018-07-02 11:00 | 116 | 14d | 0d | soroush | 3h | 30 | 1397/4/11 | 1397/4/11 |
| 118 | 5.2.4.3 | امکان اضافه کردن مبلغ به حساب ریالی به صورت دستی | 2h | 2018-07-02 15:00 | 2018-07-02 17:00 | 117 | 14d |  | soroush | 2h | 20 | 1397/4/11 | 1397/4/11 |
| 119 | 5.2.4.4 | مشاهده اعتبار کیف پول ها در پروفایل کاربری | 3h | 2018-07-02 14:00 | 2018-07-03 10:00 | 117 | 14d |  | soroush | 3h | 30 | 1397/4/11 | 1397/4/12 |
| 120 | 5.2.4.5 | مشاهده اعتبار کیف پول ها در مدیریت | 2h | 2018-07-02 11:00 | 2018-07-02 14:00 | 117 | 14d |  | soroush | 2h | 20 | 1397/4/11 | 1397/4/11 |
| 121 | 5.2.4.6 | ساخت کیف پول های موسسه | 3h | 2018-06-29 11:00 | 2018-06-29 15:00 | 116 | 14d |  | soroush | 3h | 30 | 1397/4/8 | 1397/4/8 |
| 122 | 5.2.5 | **انتقال اعتبار میان کیف پول ها** | 1.25d | 2018-07-03 10:00 | 2018-07-05 10:00 | 115 | 14d |  |  | 11h | 110 |  |  |
| 123 | 5.2.5.1 | صفحه انتقال اعتبار میان کیف پول ها | 8h | 2018-07-03 10:00 | 2018-07-04 16:00 |  | 14d | 0d | soroush | 8h | 80 | 1397/4/12 | 1397/4/13 |
| 124 | 5.2.5.2 | محاسبه کارمزد انقال ها و اضافه شدن به حساب موسسه | 3h | 2018-07-04 16:00 | 2018-07-05 10:00 | 123 | 14d |  | soroush | 3h | 30 | 1397/4/13 | 1397/4/14 |
| 125 | 5.2.6 | **آماده شدن وبسایت کلی** | 1d | 2018-06-28 08:00 | 2018-07-02 11:00 |  | 13d | 0d |  | 17h | 170 |  |  |
| 126 | 5.2.6.1 | صفحه ی اول | 8h | 2018-06-28 08:00 | 2018-06-28 17:00 |  | 12d | 0d | kossar | 8h | 80 | 1397/4/7 | 1397/4/7 |
| 127 | 5.2.6.2 | صفحه تاریخچه و معرفی موسسه | 3h | 2018-06-29 08:00 | 2018-06-29 11:00 | 126 | 14d |  | kossar | 3h | 30 | 1397/4/8 | 1397/4/8 |
| 128 | 5.2.6.3 | صفحه ارتباط با موسسه | 3h | 2018-06-29 11:00 | 2018-07-02 08:20 | 126 | 14d |  | kossar | 3h | 30 | 1397/4/8 | 1397/4/11 |
| 129 | 5.2.6.4 | اطلاع از قوانین و ضوابط سامانه | 3h | 2018-07-02 08:00 | 2018-07-02 11:00 | 126 | 14d |  | kossar | 3h | 30 | 1397/4/11 | 1397/4/11 |

| ID | WBS | Task | Duration | Start | Finish | Predecessors | Total slack | Free slack | Resources | Work | Cost | تاریخ شروع | تاریخ پایان |
| --- | --- | --- | --- | --- | --- | --- | --- | --- | --- | --- | --- | --- | --- |
| 130 | 5.2.7 | **وجود نوع تراکنش ها در سیستم** | 0.62d | 2018-07-05 11:00 | 2018-07-09 17:00 | 126, 103 | 10.62d | 0d |  | 25h | 250 |  |  |
| 131 | 5.2.7.1 | اضافه شدن مدل تراکنش بر اساس نمودار ER | 8h | 2018-07-05 11:00 | 2018-07-06 11:00 |  | 10d | 0d | parand | 8h | 80 | 1397/4/14 | 1397/4/15 |
| 132 | 5.2.7.2 | صفحه مشاهده یک تراکنش | 5h | 2018-07-09 08:00 | 2018-07-09 14:00 | 131 | 12d |  | parand | 5h | 50 | 1397/4/18 | 1397/4/18 |
| 133 | 5.2.7.3 | صفحه لیست تراکنش ها | 3h | 2018-07-09 14:00 | 2018-07-09 17:00 | 131 | 12d |  | parand | 3h | 30 | 1397/4/18 | 1397/4/18 |
| 134 | 5.2.7.4 | اضافه کردن انواع تراکنش ها توسط مدیر | 5h | 2018-07-06 11:00 | 2018-07-06 17:00 | 131 | 12d |  | parand | 5h | 50 | 1397/4/15 | 1397/4/15 |
| 135 | 5.2.7.5 | **اضافه کردن نوع تراکنش های معروف** | 0d | 2018-07-06 11:00 | 2018-07-06 15:00 |  | 12d |  |  | 4h | 40 |  |  |
| 136 | 5.2.7.5.1 | اضافه شدن آزمون های GRE/TOEFL | 1h | 2018-07-06 11:00 | 2018-07-06 12:00 | 131 | 12d | 0d | kossar | 1h | 10 | 1397/4/15 | 1397/4/15 |
| 137 | 5.2.7.5.2 | امکان پرداخت هزینه فرم به دانشگاه های خارجی | 1h | 2018-07-06 11:00 | 2018-07-06 12:00 | 131 | 12d | 0d | kossar | 1h | 10 | 1397/4/15 | 1397/4/15 |
| 138 | 5.2.7.5.3 | خروجی گرفتن به صورت fixture | 2h | 2018-07-06 13:00 | 2018-07-06 15:00 | 136, 137 | 12d |  | kossar | 2h | 20 | 1397/4/15 | 1397/4/15 |
| 139 | 5.2.8 | **انجام تراکنش** | 2d | 2018-07-10 08:00 | 2018-07-16 11:00 | 130, 125 | 10d | 0d |  | 19h | 190 |  |  |
| 140 | 5.2.8.1 | انجام تراکنش توسط کاربر در صفحه تراکنش های وبسایت | 5h | 2018-07-13 08:00 | 2018-07-13 14:00 |  | 10d |  | parand | 5h | 50 | 1397/4/22 | 1397/4/22 |
| 141 | 5.2.8.2 | مشاهده لیست تراکنش های انجام شده در پنل ریویو | 8h | 2018-07-10 11:00 | 2018-07-11 17:00 |  | 11d |  | parand | 8h | 80 | 1397/4/19 | 1397/4/20 |
| 142 | 5.2.8.3 | مشاهده لیست تراکنش ها در پنل کاربری | 3h | 2018-07-16 08:00 | 2018-07-16 11:00 |  | 10d |  | parand | 3h | 30 | 1397/4/25 | 1397/4/25 |
| 143 | 5.2.8.4 | مشاهده یک تراکنش در پنل ریویو | 3h | 2018-07-10 08:00 | 2018-07-10 11:00 |  | 12d |  | parand | 3h | 30 | 1397/4/19 | 1397/4/19 |
| 144 | 5.2.9 | **امکان پرداخت شخص به شخص** | 0d | 2018-07-17 08:00 | 2018-07-17 17:00 | 125, 139 | 10.25d |  |  | 8h | 80 |  |  |
| 145 | 5.2.9.1 | صفحه ی پرداخت شخص به شخص | 5h | 2018-07-17 08:00 | 2018-07-17 14:00 |  | 10.25d | 0d | kossar | 5h | 50 | 1397/4/26 | 1397/4/26 |
| 146 | 5.2.9.2 | ساخت اکانت برای شخصی که داخل سیستم نیست | 3h | 2018-07-17 14:00 | 2018-07-17 17:00 | 145 | 10.88d |  | kossar | 3h | 30 | 1397/4/26 | 1397/4/26 |
| 147 | 5.2.10 | برداشت از کیف پول و واریز به حساب شخصی | 5h | 2018-07-16 11:00 | 2018-07-16 17:00 | 139, 115 | 10.62d |  | parand | 5h | 50 | 1397/4/25 | 1397/4/25 |
| 148 | 5.2.11 | **آماده سازی سیستم پیامک** | 0.88d | 2018-06-27 10:00 | 2018-06-28 09:00 |  | 15.5d | 4.88d |  | 7h | 70 |  |  |
| 149 | 5.2.11.1 | آماده سازی کاوه نگار | 2h | 2018-06-27 10:00 | 2018-06-27 12:00 |  | 15.5d | 0d | soroush | 2h | 20 | 1397/4/6 | 1397/4/6 |
| 150 | 5.2.11.2 | پیاده سازی کتابخانه پیامک | 5h | 2018-06-27 13:00 | 2018-06-28 09:00 | 149 | 15.5d |  | soroush | 5h | 50 | 1397/4/6 | 1397/4/7 |
| 151 | 5.2.12 | آماده سازی سیستم ایمیل | 5h | 2018-06-27 10:00 | 2018-06-29 16:20 |  | 14.62d | 4d | kossar | 5h | 50 | 1397/4/6 | 1397/4/8 |
| 152 | 5.2.13 | **اطلاع رسانی تمامی اتفاقات مربوط به کاربر** | 1.25d | 2018-07-16 11:00 | 2018-07-19 10:00 | 148, 151, 130, 139 | 10d |  |  | 15h | 150 |  |  |
| 153 | 5.2.13.1 | ارسال پیامک و ایمیل در مورد تراکنش ها | 5h | 2018-07-18 08:00 | 2018-07-18 14:00 |  | 10.62d |  | kossar | 5h | 50 | 1397/4/27 | 1397/4/27 |
| 154 | 5.2.13.2 | تنظیمات داخل صفحه ی کاربری برای گرفتن پیامک و ایمیل | 5h | 2018-07-18 14:00 | 2018-07-19 10:00 |  | 10d |  | kossar | 5h | 50 | 1397/4/27 | 1397/4/28 |
| 155 | 5.2.13.3 | اطلاع رسانی در ازای اضافه شدن رویداد جدید به سیستم | 5h | 2018-07-16 11:00 | 2018-07-16 17:00 |  | 10.62d |  | kossar | 5h | 50 | 1397/4/25 | 1397/4/25 |

| ID | WBS | Task | Duration | Start | Finish | Predecessors | Total slack | Free slack | Resources | Work | Cost | تاریخ شروع | تاریخ پایان |
| --- | --- | --- | --- | --- | --- | --- | --- | --- | --- | --- | --- | --- | --- |
| 156 | 5.2.14 | **کتابخانه آگاهساز** | 0.38d | 2018-07-03 09:00 | 2018-07-04 11:00 | 125 | 14d |  |  | 10h | 100 |  |  |
| 157 | 5.2.14.1 | پیاده سازی کتابخانه آگاه ساز در بک اند | 5h | 2018-07-03 09:00 | 2018-07-04 11:00 |  | 14d |  | parand | 5h | 50 | 1397/4/12 | 1397/4/13 |
| 158 | 5.2.14.2 | پیاده سازی آگاه ساز در کلاینت | 5h | 2018-07-03 14:00 | 2018-07-04 10:00 |  | 14.62d |  | parand | 5h | 50 | 1397/4/12 | 1397/4/13 |
| 159 | 5.2.15 | **امکان ریویو یک تراکنش** | 0d | 2018-07-16 11:00 | 2018-07-17 11:00 | 139 | 10d | 0d |  | 11h | 110 |  |  |
| 160 | 5.2.15.1 | امکان مشاهده یک تراکنش تنها برای مدیر (کارمند تنها ریویو بکند) | 2h | 2018-07-17 09:00 | 2018-07-17 11:00 | 161 | 10.38d |  | soroush | 2h | 20 | 1397/4/26 | 1397/4/26 |
| 161 | 5.2.15.2 | امکان رد/تایید یا اسکیپ کردن تراکنش | 3h | 2018-07-16 15:00 | 2018-07-17 09:00 | 162 | 10d | 0d | soroush | 3h | 30 | 1397/4/25 | 1397/4/26 |
| 162 | 5.2.15.3 | انجام محاسبات مالی برای حساب های مختلف | 3h | 2018-07-16 11:00 | 2018-07-16 15:00 |  | 10d | 0d | soroush | 3h | 30 | 1397/4/25 | 1397/4/25 |
| 163 | 5.2.15.4 | fail کردن تمامی تراکنش ها بعد از 24 ساعت | 3h | 2018-07-16 11:00 | 2018-07-16 15:00 |  | 10.25d |  | soroush | 3h | 30 | 1397/4/25 | 1397/4/25 |
| 164 | 5.2.16 | **اطلاع دادن یک تراکنش به مدیر** | 0d | 2018-07-17 11:00 | 2018-07-17 15:00 | 159 | 10.88d |  |  | 3h | 30 |  |  |
| 165 | 5.2.16.1 | اطلاع دادن روی صفحه ریویو تراکنش | 2h | 2018-07-17 11:00 | 2018-07-17 14:00 |  | 10.88d | 0d | soroush | 2h | 20 | 1397/4/26 | 1397/4/26 |
| 166 | 5.2.16.2 | ارسال ایمیل به مدیر | 1h | 2018-07-17 14:00 | 2018-07-17 15:00 | 165 | 11.12d |  | soroush | 1h | 10 | 1397/4/26 | 1397/4/26 |
| 167 | 5.2.17 | **مشاهده آمار فعالیت یک کارمند** | 0d | 2018-07-17 11:00 | 2018-07-17 17:00 | 159 | 10.62d |  |  | 5h | 50 |  |  |
| 168 | 5.2.17.1 | مشاهده رد/تاییدها | 3h | 2018-07-17 11:00 | 2018-07-17 15:00 |  | 10.62d | 0d | parand | 3h | 30 | 1397/4/26 | 1397/4/26 |
| 169 | 5.2.17.2 | مشاهده اسکیپ ها | 2h | 2018-07-17 15:00 | 2018-07-17 17:00 | 168 | 11d |  | parand | 2h | 20 | 1397/4/26 | 1397/4/26 |
| 170 | 5.2.18 | **گرفتن نرخ لحظه ای ارز** | 1.75d | 2018-06-27 10:00 | 2018-07-02 14:00 |  | 15.25d |  |  | 7h | 70 |  |  |
| 171 | 5.2.18.1 | ذخیره سازی نرخ ارز به صورت دقیقه ای | 5h | 2018-06-27 10:00 | 2018-06-27 16:00 |  | 16.38d |  | kossar | 5h | 50 | 1397/4/6 | 1397/4/6 |
| 172 | 5.2.18.2 | مشاهده نرخ لحظه ای ارز در وبسایت | 2h | 2018-07-02 11:00 | 2018-07-02 14:00 | 125 | 15d |  | kossar | 2h | 20 | 1397/4/11 | 1397/4/11 |
| 173 | 5.3 | **آماده سازی سرور** | 2d | 2018-08-01 08:00 | 2018-08-02 17:00 |  |  |  |  | 11h | 110 |  |  |
| 174 | 5.3.1 | تهیه vps | 3h | 2018-08-01 08:00 | 2018-08-01 11:00 |  | 6d | 0d | parand | 3h | 30 | 1397/5/10 | 1397/5/10 |
| 175 | 5.3.2 | آماده سازی اکانت ها و دسترسی های اعضا | 1h | 2018-08-02 09:00 | 2018-08-02 10:00 | 174 | 6d |  | parand | 1h | 10 | 1397/5/11 | 1397/5/11 |
| 176 | 5.3.3 | نصب پکیج های لازم تیم | 3h | 2018-08-01 11:00 | 2018-08-01 15:00 | 174 | 6d | 0d | parand | 3h | 30 | 1397/5/10 | 1397/5/10 |
| 177 | 5.3.4 | **راه اندازی سرویس ایمیل و تست آن** | 0.5d | 2018-08-01 15:00 | 2018-08-02 10:00 | 176 | 6d |  |  | 4h | 40 |  |  |
| 178 | 5.3.4.1 | راه اندازی smtp و postfix | 3h | 2018-08-01 15:00 | 2018-08-02 09:00 |  | 6d | 0d | parand | 3h | 30 | 1397/5/10 | 1397/5/11 |
| 179 | 5.3.4.2 | ارسال ایمیل تستی | 1h | 2018-08-02 09:00 | 2018-08-02 10:00 | 178 | 6d |  | parand | 1h | 10 | 1397/5/11 | 1397/5/11 |

| ID | WBS | Task | Duration | Start | Finish | Predecessors | Total slack | Free slack | Constraint | Resources | Work | Cost | تاریخ شروع | تاریخ پایان |
| --- | --- | --- | --- | --- | --- | --- | --- | --- | --- | --- | --- | --- | --- | --- |
| 180 | 5.4 | **راه اندازی اولیه بر روی سرور** | 2d | 2018-08-08 08:00 | 2018-08-09 17:00 | 173, 102 |  |  |  |  | 28h | 280 |  |  |
| 181 | 5.4.1 | آماده سازی environment و نصب نیازمندی های پروژه | 2h | 2018-08-08 08:00 | 2018-08-08 10:00 |  | 5.25d | 0d |  | soroush | 2h | 20 | 1397/5/17 | 1397/5/17 |
| 182 | 5.4.2 | **راه اندازی gunicorn** | 0.5d | 2018-08-08 10:00 | 2018-08-08 15:00 | 181 | 5.25d | 1.25d |  | soroush | 4h | 40 |  |  |
| 183 | 5.4.2.1 | راه اندازی و تنظیمات gunicorn در conf پروژه | 3h | 2018-08-08 10:00 | 2018-08-08 14:00 |  | 5.25d | 0d |  |  |  |  | 1397/5/17 | 1397/5/17 |
| 184 | 5.4.2.2 | مستند سازی | 1h | 2018-08-08 14:00 | 2018-08-08 15:00 | 183 | 5.25d |  |  |  |  |  | 1397/5/17 | 1397/5/17 |
| 185 | 5.4.3 | **راه اندازی nginx** | 0.5d | 2018-08-09 13:00 | 2018-08-10 14:00 | 181 | 4d | 0d |  |  | 4h | 40 |  |  |
| 186 | 5.4.3.1 | راه اندازی و تنظیمات nginx در conf پروژه | 3h | 2018-08-09 13:00 | 2018-08-09 16:00 |  | 4.12d | 0d |  | soroush | 3h | 30 | 1397/5/18 | 1397/5/18 |
| 187 | 5.4.3.2 | مستند سازی | 1h | 2018-08-10 13:00 | 2018-08-10 14:00 | 186 | 4d |  |  | soroush | 1h | 10 | 1397/5/19 | 1397/5/19 |
| 188 | 5.4.4 | **راه اندازی supervisor** | 0.12d | 2018-08-09 16:00 | 2018-08-13 09:00 | 181 | 3.75d | 0d |  |  | 4h | 40 |  |  |
| 189 | 5.4.4.1 | راه اندازی و تنظیمات supervisor در conf پروژه | 3h | 2018-08-09 16:00 | 2018-08-10 10:00 |  | 3.75d | 0d |  | soroush | 3h | 30 | 1397/5/18 | 1397/5/19 |
| 190 | 5.4.4.2 | مستند سازی | 1h | 2018-08-13 08:00 | 2018-08-13 09:00 | 189 | 4d |  |  | soroush | 1h | 10 | 1397/5/22 | 1397/5/22 |
| 191 | 5.4.5 | **راه اندازی پایگاه داده** | 0.75d | 2018-08-08 15:00 | 2018-08-09 12:00 | 181 | 4.5d | 0.5d |  |  | 6h | 60 |  |  |
| 192 | 5.4.5.1 | راه اندازی و تنظیمات postgresql در conf پروژه | 5h | 2018-08-08 15:00 | 2018-08-09 11:00 |  | 4.62d | 0d |  | soroush | 5h | 50 | 1397/5/17 | 1397/5/18 |
| 193 | 5.4.5.2 | مستند سازی | 1h | 2018-08-09 11:00 | 2018-08-09 12:00 | 192 | 4.5d |  |  | soroush | 1h | 10 | 1397/5/18 | 1397/5/18 |
| 194 | 5.4.6 | اجرای پروژه | 8h | 2018-08-13 09:00 | 2018-08-14 09:00 | 191, 188, 185, 182 | 4d |  |  | soroush | 8h | 80 | 1397/5/22 | 1397/5/23 |
| 195 | 5.5 | **تست و گرفتن باگ ها** | 2d | 2018-08-15 08:00 | 2018-08-16 17:00 | 180 |  |  |  |  | 17h | 490 | 1397/1/8 | 1397/1/10 |
| 196 | 5.5.1 | رفع باگ های احتمالی | 2d | 2018-08-15 08:00 | 2018-08-16 17:00 |  | 2.88d |  |  | team | 16h | 480 | 1397/5/24 | 1397/5/25 |
| 197 | 5.5.2 | راه اندازی سیستم uptime bot | 1h | 2018-08-15 08:00 | 2018-08-15 09:00 |  | 4.75d |  |  | soroush | 1h | 10 | 1397/5/24 | 1397/5/24 |
| 198 | 5.6 | تحویل نهایی | 9h | 2018-08-23 08:00 | 2018-08-24 09:00 | 195 | 1.88d |  | start no earlier than 2018-08-23 08:00 | team | 9h | 270 | 1397/6/1 | 1397/6/2 |
