# WBS-CPS-7-15-2018

Schedule from MS Project, 2018-02-27 to 2018-09-04, costs in $, A marks actual dates.

## Calendars

- C2: Mon-Tue off; Wed-Thu 08:00-12:00, 13:00-17:00; Fri-Sun off.

## Resources

| Resource | Rate |
| --- | --- |
| parand | 10 |
| soroush | 10 |
| kossar | 10 |
| team | 30 |

## Schedule

| ID | WBS | Task | Duration | Start | Finish | Predecessors | Complete | Resources | Work | Actual work | Cost | Actual cost | تاریخ شروع | تاریخ پایان |
| --- | --- | --- | --- | --- | --- | --- | --- | --- | --- | --- | --- | --- | --- | --- |
| 1 | 1 | **فاز صفر: ارائه پیشنهادنامه** | 2d | 2018-02-27 08:00 A | 2018-03-05 09:30 A |  | 100% |  | 27.5h | 27.5h | 371.67 | 371.67 |  |  |
| 2 | 1.1 | برگزاری جلسه‌ی هم‌فکری | 0.5d | 2018-02-27 08:00 A | 2018-02-27 12:00 A |  | 100% | team | 4h | 4h | 120 | 120 | 1396/12/8 | 1396/12/8 |
| 3 | 1.2 | **نگارش پیشنهادنامه** | 2d | 2018-02-27 08:00 A | 2018-03-05 09:30 A | 2 | 100% |  | 23.5h | 23.5h | 235 | 235 |  |  |
| 4 | 1.2.1 | اهداف و توجیه | 0.19d | 2018-02-28 08:00 A | 2018-02-28 09:30 A |  | 100% | kossar | 4h | 4h | 40 | 40 | 1396/12/9 | 1396/12/9 |
| 5 | 1.2.2 | معرفی و مفاد قرارداد | 0.19d | 2018-02-28 08:00 A | 2018-02-28 09:30 A |  | 100% | kossar | 1.5h | 1.5h | 15 | 15 | 1396/12/9 | 1396/12/9 |
| 6 | 1.2.3 | **معرفی سیستم و توضیح تکنولوژی** | 0.12d | 2018-02-27 08:00 A | 2018-02-28 09:00 A |  | 100% |  | 4.5h | 4.5h | 45 | 45 |  |  |
| 7 | 1.2.3.1 | تهیه گزینه راه‌حل‌های تکنولوژی | 0.19d | 2018-02-27 08:00 A | 2018-02-27 09:30 A |  | 100% | soroush | 1.5h | 1.5h | 15 | 15 | 1396/12/8 | 1396/12/8 |
| 8 | 1.2.3.2 | امکان سنجی گزینه‌ها | 0.25d | 2018-02-27 08:00 A | 2018-02-27 10:00 A | 7 | 100% | soroush | 2h | 2h | 20 | 20 | 1396/12/8 | 1396/12/8 |
| 9 | 1.2.3.3 | انتخاب گزینه راه حل نهایی | 0.12d | 2018-02-28 08:00 A | 2018-02-28 09:00 A | 8 | 100% | soroush | 1h | 1h | 10 | 10 | 1396/12/9 | 1396/12/9 |
| 10 | 1.2.4 | **پوشش نیازمندی‌های کارکردی و غیرکارکردی** | 1.19d | 2018-02-28 08:00 A | 2018-03-01 09:30 A |  | 100% |  | 3h | 3h | 30 | 30 |  |  |
| 11 | 1.2.4.1 | نیازمندی‌های کارکردی | 0.19d | 2018-02-28 08:00 A | 2018-02-28 09:30 A |  | 100% | kossar | 1.5h | 1.5h | 15 | 15 | 1396/12/9 | 1396/12/9 |
| 12 | 1.2.4.2 | نیازمندی‌های غیرکارکردی | 0.19d | 2018-03-01 08:00 A | 2018-03-01 09:30 A |  | 100% | soroush | 1.5h | 1.5h | 15 | 15 | 1396/12/10 | 1396/12/10 |
| 13 | 1.2.5 | **برآورد زمانی** | 0.19d | 2018-03-01 08:00 A | 2018-03-01 09:30 A |  | 100% |  | 2.5h | 2.5h | 25 | 25 |  |  |
| 14 | 1.2.5.1 | برآورد زمانی | 0.19d | 2018-03-01 08:00 A | 2018-03-01 09:30 A |  | 100% | parand | 1.5h | 1.5h | 15 | 15 | 1396/12/10 | 1396/12/10 |
| 15 | 1.2.5.2 | تحلیل زمانی net present value | 0.12d | 2018-03-01 08:00 A | 2018-03-01 09:00 A | 14 | 100% | parand | 1h | 1h | 10 | 10 | 1396/12/10 | 1396/12/10 |
| 16 | 1.2.6 | برآورد مالی | 0.5d | 2018-03-02 08:00 A | 2018-03-02 12:00 A | 13 | 100% | parand | 4h | 4h | 40 | 40 | 1396/12/11 | 1396/12/11 |
| 17 | 1.2.7 | مراحل اجرای پروژه | 0.12d | 2018-03-02 08:00 A | 2018-03-02 09:00 A | 13 | 100% | soroush | 1h | 1h | 10 | 10 | 1396/12/11 | 1396/12/11 |
| 18 | 1.2.8 | معرفی اعضای گروه | 0.19d | 2018-03-02 08:00 A | 2018-03-02 09:30 A |  | 100% | parand | 1.5h | 1.5h | 15 | 15 | 1396/12/11 | 1396/12/11 |
| 19 | 1.2.9 | بیان نمرات اضافی | 0.19d | 2018-03-03 08:00 A | 2018-03-05 09:30 A |  | 100% | parand | 1.5h | 1.5h | 15 | 15 | 1396/12/12 | 1396/12/14 |
| 20 | 1.3 | **ارسال پروپوزال** | 0d | 2018-03-03 08:00 A | 2018-03-04 17:00 A | 3 | 100% |  |  |  | 16.67 | 16.67 |  |  |
| 21 | 1.3.1 | بازبینی و ویرایش | 0.19d | 2018-03-03 08:00 A | 2018-03-04 17:00 A |  | 100% | soroush |  |  | 15 | 15 | 1396/12/12 | 1396/12/13 |
| 22 | 1.3.2 | ارسال نسخه نهایی | 0.02d | 2018-03-03 08:00 A | 2018-03-04 17:00 A | 21 | 100% | soroush |  |  | 1.67 | 1.67 | 1396/12/12 | 1396/12/13 |
| 23 | 2 | **فاز یک: تحلیل ساختار شکست کار** | 3.39d | 2018-03-05 08:00 A | 2018-03-15 11:05 A | 1 | 100% |  | 36.42h | 36.42h | 437.5 | 437.5 |  |  |
| 24 | 2.1 | جلسه هم‌فکری و تقسیم کار | 0.46d | 2018-03-05 08:00 A | 2018-03-05 11:40 A |  | 100% | team | 3.67h | 3.67h | 110 | 110 | 1396/12/14 | 1396/12/14 |

| ID | WBS | Task | Duration | Start | Finish | Predecessors | Complete | Resources | Work | Actual work | Cost | Actual cost | تاریخ شروع | تاریخ پایان |
| --- | --- | --- | --- | --- | --- | --- | --- | --- | --- | --- | --- | --- | --- | --- |
| 25 | 2.2 | **تهیه نسخه اولیه ساختار شکست فاز صفر** | 0.85d | 2018-03-14 11:40 A | 2018-03-15 10:30 A | 24 | 100% |  | 6.33h | 6.33h | 63.33 | 63.33 |  |  |
| 26 | 2.2.1 | تعیین task های سطح اول | 0.04d | 2018-03-14 11:40 A | 2018-03-14 12:00 A |  | 100% | kossar | 0.33h | 0.33h | 3.33 | 3.33 | 1396/12/23 | 1396/12/23 |
| 27 | 2.2.2 | تعیین task های سطح دوم | 0.06d | 2018-03-14 12:10 A | 2018-03-14 13:30 A | 26 | 100% | kossar | 0.5h | 0.5h | 5 | 5 | 1396/12/23 | 1396/12/23 |
| 28 | 2.2.3 | تعیین task های سطح سوم | 0.02d | 2018-03-14 13:00 A | 2018-03-14 13:10 A | 27 | 100% | kossar | 0.17h | 0.17h | 1.67 | 1.67 | 1396/12/23 | 1396/12/23 |
| 29 | 2.2.4 | تعیین وابستگی‌ها | 0.06d | 2018-03-14 13:10 A | 2018-03-14 13:40 A | 28 | 100% | soroush | 0.5h | 0.5h | 5 | 5 | 1396/12/23 | 1396/12/23 |
| 30 | 2.2.5 | زمان‌بندی و اختصاص منابع | 0.6d | 2018-03-14 13:40 A | 2018-03-15 10:30 A | 29 | 100% | parand | 4.83h | 4.83h | 48.33 | 48.33 | 1396/12/23 | 1396/12/24 |
| 31 | 2.3 | **تهیه نسخه اولیه ساختار شکست فاز یک** | 0.93d | 2018-03-14 11:40 A | 2018-03-15 11:05 A | 24 | 100% |  | 6.5h | 6.5h | 65 | 65 |  |  |
| 32 | 2.3.1 | تعیین task های سطح اول | 0.03d | 2018-03-14 11:40 A | 2018-03-14 11:55 A |  | 100% | kossar | 0.25h | 0.25h | 2.5 | 2.5 | 1396/12/23 | 1396/12/23 |
| 33 | 2.3.2 | تعیین task های سطح دوم | 0.01d | 2018-03-14 11:55 A | 2018-03-14 12:00 A | 32 | 100% | kossar | 0.08h | 0.08h | 0.83 | 0.83 | 1396/12/23 | 1396/12/23 |
| 34 | 2.3.3 | تعیین task های سطح سوم | 0.02d | 2018-03-14 12:15 A | 2018-03-14 13:10 A | 33 | 100% | kossar | 0.17h | 0.17h | 1.67 | 1.67 | 1396/12/23 | 1396/12/23 |
| 35 | 2.3.4 | تعیین وابستگی‌ها | 0.06d | 2018-03-14 12:25 A | 2018-03-14 13:30 A | 34 | 100% | soroush | 0.5h | 0.5h | 5 | 5 | 1396/12/23 | 1396/12/23 |
| 36 | 2.3.5 | زمان‌بندی و اختصاص منابع | 0.69d | 2018-03-14 13:30 A | 2018-03-15 11:05 A | 35 | 100% | soroush | 5.5h | 5.5h | 55 | 55 | 1396/12/23 | 1396/12/24 |
| 37 | 2.4 | **تهیه نسخه اولیه ساختار شکست فاز دو** | 0.93d | 2018-03-14 11:40 A | 2018-03-15 11:05 A | 24 | 100% |  | 6.5h | 6.5h | 65 | 65 |  |  |
| 38 | 2.4.1 | تعیین task های سطح اول | 0.03d | 2018-03-14 11:40 A | 2018-03-14 11:55 A |  | 100% | kossar | 0.25h | 0.25h | 2.5 | 2.5 | 1396/12/23 | 1396/12/23 |
| 39 | 2.4.2 | تعیین task های سطح دوم | 0.01d | 2018-03-14 11:55 A | 2018-03-14 12:00 A | 38 | 100% | parand | 0.08h | 0.08h | 0.83 | 0.83 | 1396/12/23 | 1396/12/23 |
| 40 | 2.4.3 | تعیین task های سطح سوم | 0.02d | 2018-03-14 12:15 A | 2018-03-14 13:10 A | 39 | 100% | parand | 0.17h | 0.17h | 1.67 | 1.67 | 1396/12/23 | 1396/12/23 |
| 41 | 2.4.4 | تعیین وابستگی‌ها | 0.06d | 2018-03-14 12:25 A | 2018-03-14 13:30 A | 40 | 100% | soroush | 0.5h | 0.5h | 5 | 5 | 1396/12/23 | 1396/12/23 |
| 42 | 2.4.5 | زمان‌بندی و اختصاص منابع | 0.69d | 2018-03-14 13:30 A | 2018-03-15 11:05 A | 41 | 100% | soroush | 5.5h | 5.5h | 55 | 55 | 1396/12/23 | 1396/12/24 |
| 43 | 2.5 | **تهیه نسخه اولیه ساختار شکست فاز سه** | 0.93d | 2018-03-14 11:40 A | 2018-03-15 11:05 A | 24 | 100% |  | 6.75h | 6.75h | 67.5 | 67.5 |  |  |
| 44 | 2.5.1 | تعیین task های سطح اول | 0.03d | 2018-03-14 11:40 A | 2018-03-14 11:55 A |  | 100% | parand | 0.25h | 0.25h | 2.5 | 2.5 | 1396/12/23 | 1396/12/23 |
| 45 | 2.5.2 | تعیین task های سطح دوم | 0.02d | 2018-03-14 11:55 A | 2018-03-14 13:05 A | 44 | 100% | parand | 0.17h | 0.17h | 1.67 | 1.67 | 1396/12/23 | 1396/12/23 |
| 46 | 2.5.3 | تعیین task های سطح سوم | 0.04d | 2018-03-14 12:15 A | 2018-03-14 13:20 A | 45 | 100% | parand | 0.33h | 0.33h | 3.33 | 3.33 | 1396/12/23 | 1396/12/23 |
| 47 | 2.5.4 | تعیین وابستگی‌ها | 0.06d | 2018-03-14 12:25 A | 2018-03-14 13:30 A | 46 | 100% | soroush | 0.5h | 0.5h | 5 | 5 | 1396/12/23 | 1396/12/23 |
| 48 | 2.5.5 | زمان‌بندی و اختصاص منابع | 0.69d | 2018-03-14 13:30 A | 2018-03-15 11:05 A | 47 | 100% | soroush | 5.5h | 5.5h | 55 | 55 | 1396/12/23 | 1396/12/24 |

| ID | WBS | Task | Duration | Start | Finish | Predecessors | Complete | Constraint | Resources | Work | Actual work | Cost | Actual cost | تاریخ شروع | تاریخ پایان |
| --- | --- | --- | --- | --- | --- | --- | --- | --- | --- | --- | --- | --- | --- | --- | --- |
| 49 | 2.6 | **تهیه نسخه اولیه ساختار شکست فاز چهار** | 0.93d | 2018-03-14 11:40 A | 2018-03-15 11:05 A | 24 | 100% |  |  | 6.67h | 6.67h | 66.67 | 66.67 |  |  |
| 50 | 2.6.1 | تعیین task های سطح اول | 0.03d | 2018-03-14 11:40 A | 2018-03-14 11:55 A |  | 100% |  | parand | 0.25h | 0.25h | 2.5 | 2.5 | 1396/12/23 | 1396/12/23 |
| 51 | 2.6.2 | تعیین task های سطح دوم | 0.03d | 2018-03-14 11:55 A | 2018-03-14 13:10 A | 50 | 100% |  | parand | 0.25h | 0.25h | 2.5 | 2.5 | 1396/12/23 | 1396/12/23 |
| 52 | 2.6.3 | تعیین task های سطح سوم | 0.02d | 2018-03-14 12:15 A | 2018-03-14 13:10 A | 51 | 100% |  | kossar | 0.17h | 0.17h | 1.67 | 1.67 | 1396/12/23 | 1396/12/23 |
| 53 | 2.6.4 | تعیین وابستگی‌ها | 0.06d | 2018-03-14 12:25 A | 2018-03-14 13:30 A | 52 | 100% |  | soroush | 0.5h | 0.5h | 5 | 5 | 1396/12/23 | 1396/12/23 |
| 54 | 2.6.5 | زمان‌بندی و اختصاص منابع | 0.69d | 2018-03-14 13:30 A | 2018-03-15 11:05 A | 53 | 100% |  | soroush | 5.5h | 5.5h | 55 | 55 | 1396/12/23 | 1396/12/24 |
| 55 | 3 | **فاز دو: تحلیل اولیه مورد‌های کاربردی و سناریوهای تست‌ها** | 4d | 2018-04-18 08:00 A | 2018-04-30 10:30 A | 23 | 100% |  |  | 81.6h | 81.6h | 1,036 | 1,036 |  |  |
| 56 | 3.1 | جلسه هم‌فکری و تقسیم کار | 1d | 2018-04-18 08:00 A | 2018-04-18 17:00 A |  | 100% |  | team | 8h | 8h | 240 | 240 | 1397/1/29 | 1397/1/29 |
| 57 | 3.2 | **تهیه نسخه اولیه موارد کاربردی** | 2d | 2018-04-18 08:00 A | 2018-04-23 17:00 A | 56 | 100% |  |  | 21.6h | 21.6h | 216 | 216 |  |  |
| 58 | 3.2.1 | شناسایی actor ها | 1d | 2018-04-18 08:00 A | 2018-04-18 17:00 A |  | 100% |  | kossar | 8h | 8h | 80 | 80 | 1397/1/29 | 1397/1/29 |
| 59 | 3.2.2 | بازنگری و نهایی کردن actorها | 0.2d | 2018-04-19 08:00 A | 2018-04-19 09:36 A | 58 | 100% |  | parand | 1.6h | 1.6h | 16 | 16 | 1397/1/30 | 1397/1/30 |
| 60 | 3.2.3 | شناسایی موارد کاریردی از روی نیازمندی‌های کاربردی | 0.5d | 2018-04-19 08:00 A | 2018-04-19 12:00 A | 58 | 100% |  | kossar | 4h | 4h | 40 | 40 | 1397/1/30 | 1397/1/30 |
| 61 | 3.2.4 | ثبت گرافیکی موارد کاربردی و تهیه usecase diagram | 1d | 2018-04-23 08:00 A | 2018-04-23 17:00 A | 60 | 100% | start no earlier than 2018-04-23 08:00 | kossar | 8h | 8h | 80 | 80 | 1397/2/3 | 1397/2/3 |
| 62 | 3.3 | **تهیه نسخه اولیه سناریوهای تست** | 2d | 2018-04-20 08:00 A | 2018-04-27 17:00 A |  | 100% |  |  | 48h | 48h | 480 | 480 |  |  |
| 63 | 3.3.1 | نوشتن تست اولیه با selenium - آموزشی | 1d | 2018-04-23 08:00 A | 2018-04-23 17:00 A |  | 100% | start no earlier than 2018-04-23 08:00 | soroush | 8h | 8h | 80 | 80 | 1397/2/3 | 1397/2/3 |
| 64 | 3.3.2 | نوشتن ui اولیه - آموزشی | 2d | 2018-04-20 08:00 A | 2018-04-23 17:00 A |  | 100% | start no earlier than 2018-04-20 08:00 | parand | 16h | 16h | 160 | 160 | 1397/1/31 | 1397/2/3 |
| 65 | 3.3.3 | پیاده سازی تست در جنگو با selenium | 2d | 2018-04-26 08:00 A | 2018-04-27 17:00 A | 56, 63 | 100% | start no earlier than 2018-04-26 08:00 | soroush | 16h | 16h | 160 | 160 | 1397/2/6 | 1397/2/7 |
| 66 | 3.3.4 | پیاده سازی UI | 1d | 2018-04-26 08:00 A | 2018-04-26 17:00 A | 56, 64 | 100% | start no earlier than 2018-04-26 08:00 | parand | 8h | 8h | 80 | 80 | 1397/2/6 | 1397/2/6 |
| 67 | 3.4 | **ارسال خروجی** | 0d | 2018-04-30 08:00 A | 2018-04-30 10:30 A |  | 100% |  |  | 4h | 4h | 100 | 100 |  |  |
| 68 | 3.4.1 | **بازبینی و ویرایش** | 0d | 2018-04-30 08:00 A | 2018-04-30 09:30 A | 62, 57 | 100% |  |  | 3h | 3h | 90 | 90 |  |  |
| 69 | 3.4.1.1 | بازبینی و ویرایش موارد کاربردی | 0.19d | 2018-04-30 08:00 A | 2018-04-30 09:30 A | 57 | 100% | start no earlier than 2018-04-26 08:00 | team | 1.5h | 1.5h | 45 | 45 | 1397/2/10 | 1397/2/10 |
| 70 | 3.4.1.2 | بازبینی و ویرایش سناریوهای تست | 0.19d | 2018-04-30 08:00 A | 2018-04-30 09:30 A | 62 | 100% |  | team | 1.5h | 1.5h | 45 | 45 | 1397/2/10 | 1397/2/10 |
| 71 | 3.4.2 | ارسال | 1h | 2018-04-30 09:30 A | 2018-04-30 10:30 A | 68 | 100% | start no earlier than 2018-04-30 08:00 | soroush | 1h | 1h | 10 | 10 | 1397/2/10 | 1397/2/10 |
| 72 | 4 | **فاز سه: تکمیل موردهای کاربردی و سناریوهای تست** | 14d | 2018-05-02 08:00 A | 2018-06-18 11:20 A | 55 | 100% |  |  | 189.33h | 189.33h | 1,953.33 | 1,953.33 |  |  |
| 73 | 4.1 | جلسه بررسی بازخورد کارفرما نسبت به موارد کاربردی و سناریوهای تست | 0.12d | 2018-05-02 08:00 A | 2018-05-02 09:00 A |  | 100% |  |  |  |  |  |  | 1397/2/12 | 1397/2/12 |

| ID | WBS | Task | Type | Duration | Start | Finish | Predecessors | Complete | Remaining | Actual finish | Constraint | Resources | Work | Actual work | Cost | Actual cost | تاریخ شروع | تاریخ پایان |
| --- | --- | --- | --- | --- | --- | --- | --- | --- | --- | --- | --- | --- | --- | --- | --- | --- | --- | --- |
| 74 | 4.2 | **بازبینی موارد کاربردی** |  | 1.88d | 2018-05-02 09:00 A | 2018-05-07 11:00 A | 73 | 100% |  |  |  |  | 9h | 9h | 150 | 150 |  |  |
| 75 | 4.2.1 | اصلاح موارد مورد اختلاف با کارفرما |  | 0.38d | 2018-05-02 09:00 A | 2018-05-02 12:00 A |  | 100% |  |  |  | team | 3h | 3h | 90 | 90 | 1397/2/12 | 1397/2/12 |
| 76 | 4.2.2 | اضافه کردن موارد جا افتاده |  | 0.38d | 2018-05-04 14:00 A | 2018-05-04 17:00 A | 75 | 100% |  |  |  | kossar | 3h | 3h | 30 | 30 | 1397/2/14 | 1397/2/14 |
| 77 | 4.2.3 | حذف موارد اضافی |  | 0.38d | 2018-05-07 08:00 A | 2018-05-07 11:00 A | 76 | 100% |  |  |  | kossar | 3h | 3h | 30 | 30 | 1397/2/17 | 1397/2/17 |
| 78 | 4.3 | **تکمیل موارد کاربردی** |  | 6d | 2018-05-11 08:00 A | 2018-06-01 17:00 A | 74 | 100% |  |  |  |  | 39h | 39h | 390 | 390 |  |  |
| 79 | 4.3.1 | انتقال دانش نوشتن موارد کاربردی |  | 3h | 2018-05-11 08:00 A | 2018-05-11 16:00 A |  | 100% |  |  | start no earlier than 2018-05-11 08:00 | kossar; soroush | 3h | 3h | 30 | 30 | 1397/2/21 | 1397/2/21 |
| 80 | 4.3.2 | انتقال دانش نوشتن تست |  | 4h | 2018-05-11 08:00 A | 2018-05-11 12:00 A |  | 100% |  |  | start no earlier than 2018-05-11 08:00 | soroush; parand; kossar | 12h | 12h | 120 | 120 | 1397/2/21 | 1397/2/21 |
| 81 | 4.3.3 | نوشتن موارد کاربردی مشتری |  | 1d | 2018-05-24 08:00 A | 2018-05-28 17:00 A | 79 | 100% |  |  | start no earlier than 2018-05-24 08:00 | kossar | 8h | 8h | 80 | 80 | 1397/3/3 | 1397/3/7 |
| 82 | 4.3.4 | نوشتن موارد کاربردی مدیر |  | 1d | 2018-05-24 08:00 A | 2018-05-31 17:00 A | 79 | 100% |  |  | start no earlier than 2018-05-24 08:00 | soroush | 8h | 8h | 80 | 80 | 1397/3/3 | 1397/3/10 |
| 83 | 4.3.5 | نوشتن موارد کاربردی کارمند |  | 1d | 2018-05-24 08:00 A | 2018-06-01 17:00 A | 79 | 100% |  |  | start no earlier than 2018-05-24 08:00 | parand | 8h | 8h | 80 | 80 | 1397/3/3 | 1397/3/11 |
| 84 | 4.4 | **نوشتن سناریوهای تست** |  | 4d | 2018-06-04 08:00 A | 2018-06-12 17:00 | 78 | 100% |  | 2018-06-11 17:00 |  |  | 136h | 136h | 1,360 | 1,360 |  |  |
| 85 | 4.4.1 | نوشتن تست های مشتری | manual | 2d | 2018-06-07 08:00 A | 2018-06-08 17:00 A | 80 | 100% |  |  |  | soroush | 16h | 16h | 160 | 160 | 1397/3/17 | 1397/3/18 |
| 86 | 4.4.2 | نوشتن تست های مدیر | manual | 2d | 2018-06-07 08:00 A | 2018-06-11 17:00 A | 80 | 100% |  |  |  | parand | 24h | 24h | 240 | 240 | 1397/3/17 | 1397/3/21 |
| 87 | 4.4.3 | نوشتن تست های سیستم | manual | 2d | 2018-06-07 08:00 A | 2018-06-11 17:00 A | 80 | 100% |  |  |  | kossar | 24h | 24h | 240 | 240 | 1397/3/17 | 1397/3/21 |
| 88 | 4.4.4 | نوشتن تست های کارمند | manual | 2d | 2018-06-04 08:00 A | 2018-06-05 17:00 A | 80 | 100% |  |  |  | kossar | 16h | 16h | 160 | 160 | 1397/3/16 | 1397/3/17 |
| 89 | 4.4.5 | طراحی ui پنل مدیر | manual | 2d | 2018-06-04 08:00 A | 2018-06-06 17:00 A |  | 100% |  |  |  | soroush | 24h | 24h | 240 | 240 | 1397/3/16 | 1397/3/18 |
| 90 | 4.4.6 | طراحی ui پنل مشتری | manual | 2d | 2018-06-04 08:00 A | 2018-06-06 17:00 A |  | 100% |  |  |  | parand | 24h | 24h | 240 | 240 | 1397/3/16 | 1397/3/18 |
| 91 | 4.4.7 | طراحی پنل کارمند | manual | 1d | 2018-06-07 08:00 A | 2018-06-07 17:00 A | 89 | 100% |  |  |  | kossar | 8h | 8h | 80 | 80 | 1397/3/17 | 1397/3/17 |
| 92 | 4.5 | **ویرایش و ارسال** |  | 0.42d | 2018-06-18 08:00 A | 2018-06-18 11:20 A | 74, 84 | 100% |  |  |  |  | 5.33h | 5.33h | 53.33 | 53.33 |  |  |
| 93 | 4.5.1 | گذاشتن دیاگرام موارد کاربردی پایانی |  | 2h | 2018-06-18 08:00 A | 2018-06-18 10:00 A |  | 100% |  |  |  | kossar | 2h | 2h | 20 | 20 | 1397/3/28 | 1397/3/28 |
| 94 | 4.5.2 | بازبینی و ویرایش نسخه نهایی موارد کاربردی و سناریوهای تست |  | 0.38d | 2018-06-18 08:00 A | 2018-06-18 11:00 A |  | 100% |  |  |  | soroush | 3h | 3h | 30 | 30 | 1397/3/28 | 1397/3/28 |
| 95 | 4.5.3 | ارسال خروجی |  | 0.04d | 2018-06-18 11:00 A | 2018-06-18 11:20 A | 94 | 100% |  |  |  | soroush | 0.33h | 0.33h | 3.33 | 3.33 | 1397/3/28 | 1397/3/28 |
| 96 | 5 | **فاز چهارم پروژه** |  | 21d | 2018-06-25 08:00 A | 2018-08-30 17:00 |  | 9% | 19.01d |  |  |  | 272h | 23h | 3,220 | 230 |  |  |
| 97 | 5.1 | **طراحی پایگاه داده** |  | 0.25d | 2018-06-25 08:00 A | 2018-06-27 10:00 A |  | 100% |  |  |  |  | 18h | 18h | 180 | 180 |  |  |
| 98 | 5.1.1 | طراحی پایگاه داده اولیه در قالب ERD |  | 8h | 2018-06-25 08:00 A | 2018-06-25 17:00 A |  | 100% |  |  |  | kossar | 8h | 8h | 80 | 80 | 1397/4/4 | 1397/4/4 |
| 99 | 5.1.2 | جلسه بررسی تطابق طراحی با نیازمندی ها |  | 2h | 2018-06-26 08:00 A | 2018-06-26 10:00 A | 98 | 100% |  |  | start no earlier than 2018-03-15 08:00 | parand | 2h | 2h | 20 | 20 | 1397/4/5 | 1397/4/5 |
| 100 | 5.1.3 | طراحی مجدد جداول براساس فیدبک جلسه تطابق |  | 5h | 2018-06-26 10:00 A | 2018-06-26 16:00 A | 99 | 100% |  |  |  | kossar | 5h | 5h | 50 | 50 | 1397/4/5 | 1397/4/5 |
| 101 | 5.1.4 | نرمال سازی جداول تا 3nf |  | 3h | 2018-06-26 16:00 A | 2018-06-27 10:00 A | 100 | 100% |  |  |  | parand | 3h | 3h | 30 | 30 | 1397/4/5 | 1397/4/6 |

| ID | WBS | Task | Duration | Start | Finish | Predecessors | Complete | Remaining | Actual start | Total slack | Free slack | Resources | Work | Actual work | Cost | Actual cost | تاریخ شروع | تاریخ پایان |
| --- | --- | --- | --- | --- | --- | --- | --- | --- | --- | --- | --- | --- | --- | --- | --- | --- | --- | --- |
| 102 | 5.2 | **پیاده سازی** | 14.75d | 2018-07-09 08:00 | 2018-08-23 15:00 | 97 | 4% | 14.14d | 2018-06-27 10:00 |  |  |  | 189h | 5h | 1,890 | 50 |  |  |
| 103 | 5.2.1 | **امکان ثبت نام/ورود/خروج در سیستم** | 5.75d | 2018-06-27 10:00 A | 2018-07-17 17:00 | 97 | 50% | 2.88d |  | 10d | 0d |  | 13h | 5h | 130 | 50 |  |  |
| 104 | 5.2.1.1 | آماده شدن مدل اولیه کاربر طبق نمودار ER | 3h | 2018-06-27 10:00 A | 2018-06-27 14:00 A |  | 100% |  |  |  |  |  |  |  |  |  | 1397/4/6 | 1397/4/6 |
| 105 | 5.2.1.2 | امکان ثبت نام | 5h | 2018-06-28 09:00 A | 2018-07-09 12:00 A | 104 | 100% |  |  |  |  | soroush | 5h | 5h | 50 | 50 | 1397/4/7 | 1397/4/18 |
| 106 | 5.2.1.3 | امکان مشاهده اطلاعات شخصی خود در پنل شخصی | 3h | 2018-07-11 09:00 | 2018-07-13 09:00 | 104 |  |  |  | 10d |  | soroush | 3h |  | 30 |  | 1397/4/20 | 1397/4/22 |
| 107 | 5.2.1.4 | امکان ورود به سیستم | 3h | 2018-07-16 08:00 | 2018-07-16 16:00 | 105 |  |  |  | 9d | 0d | soroush | 3h |  | 30 |  | 1397/4/25 | 1397/4/25 |
| 108 | 5.2.1.5 | امکان خروج از سیستم | 2h | 2018-07-16 16:00 | 2018-07-17 17:00 | 107 |  |  |  | 9.88d |  | soroush | 2h |  | 20 |  | 1397/4/25 | 1397/4/26 |
| 109 | 5.2.2 | امکان ویرایش اطلاعات شخصی توسط کاربر | 5h | 2018-07-18 08:00 | 2018-07-18 14:00 | 103 |  |  |  | 11.38d |  | kossar | 5h |  | 50 |  | 1397/4/27 | 1397/4/27 |
| 110 | 5.2.3 | **مدیریت اعضای سامانه در پنل مدیریت** | 0d | 2018-07-09 08:00 | 2018-07-10 16:20 | 104 |  |  |  | 14d |  |  | 12h |  | 120 |  |  |  |
| 111 | 5.2.3.1 | اضافه کردن کارمند توسط مدیر | 1h | 2018-07-09 08:00 | 2018-07-09 09:00 |  |  |  |  | 14d |  | parand | 1h |  | 10 |  | 1397/4/18 | 1397/4/18 |
| 112 | 5.2.3.2 | مشاهده کاربران بر اساس سطح دسترسی | 5h | 2018-07-09 11:20 | 2018-07-10 09:20 |  |  |  |  | 14d | 0d | parand | 5h |  | 50 |  | 1397/4/18 | 1397/4/19 |
| 113 | 5.2.3.3 | مشاهده اطلاعات شخصی یک کاربر در پنل ریویو | 3h | 2018-07-10 09:20 | 2018-07-10 13:20 | 112 |  |  |  | 14d | 0d | parand | 3h |  | 30 |  | 1397/4/19 | 1397/4/19 |
| 114 | 5.2.3.4 | امکان مسدود کردن کاربران سیستم | 3h | 2018-07-10 13:20 | 2018-07-10 16:20 | 113 |  |  |  | 14d |  | parand | 3h |  | 30 |  | 1397/4/19 | 1397/4/19 |
| 115 | 5.2.4 | **ساخت کیف پول برای اعضای سیستم** | 1.5d | 2018-07-09 16:00 | 2018-07-12 12:00 | 105 |  |  |  | 12d | 0d |  | 18h |  | 180 |  |  |  |
| 116 | 5.2.4.1 | اضافه شدن مدل های کیف پول بر نمودار جدول ER | 5h | 2018-07-09 16:00 | 2018-07-10 12:00 |  |  |  |  | 12d | 0d | soroush | 5h |  | 50 |  | 1397/4/18 | 1397/4/19 |
| 117 | 5.2.4.2 | ساخته شدن کیف پول به هنگام ثبت نام کاربر | 3h | 2018-07-10 16:00 | 2018-07-11 12:00 | 116 |  |  |  | 12.38d | 0d | soroush | 3h |  | 30 |  | 1397/4/19 | 1397/4/20 |
| 118 | 5.2.4.3 | امکان اضافه کردن مبلغ به حساب ریالی به صورت دستی | 2h | 2018-07-12 08:00 | 2018-07-12 10:00 | 117 |  |  |  | 12.75d |  | soroush | 2h |  | 20 |  | 1397/4/21 | 1397/4/21 |
| 119 | 5.2.4.4 | مشاهده اعتبار کیف پول ها در پروفایل کاربری | 3h | 2018-07-11 16:00 | 2018-07-12 12:00 | 117 |  |  |  | 12.5d |  | soroush | 3h |  | 30 |  | 1397/4/20 | 1397/4/21 |
| 120 | 5.2.4.5 | مشاهده اعتبار کیف پول ها در مدیریت | 2h | 2018-07-11 13:00 | 2018-07-11 15:00 | 117 |  |  |  | 13.25d |  | soroush | 2h |  | 20 |  | 1397/4/20 | 1397/4/20 |
| 121 | 5.2.4.6 | ساخت کیف پول های موسسه | 3h | 2018-07-10 13:00 | 2018-07-10 16:00 | 116 |  |  |  | 13.62d |  | soroush | 3h |  | 30 |  | 1397/4/19 | 1397/4/19 |
| 122 | 5.2.5 | **انتقال اعتبار میان کیف پول ها** | 0.5d | 2018-07-12 13:00 | 2018-07-16 12:00 | 115 |  |  |  | 12d |  |  | 11h |  | 110 |  |  |  |
| 123 | 5.2.5.1 | صفحه انتقال اعتبار میان کیف پول ها | 8h | 2018-07-12 13:00 | 2018-07-16 09:00 |  |  |  |  | 12d | 0d | soroush | 8h |  | 80 |  | 1397/4/21 | 1397/4/25 |
| 124 | 5.2.5.2 | محاسبه کارمزد انقال ها و اضافه شدن به حساب موسسه | 3h | 2018-07-16 09:00 | 2018-07-16 12:00 | 123 |  |  |  | 12d |  | soroush | 3h |  | 30 |  | 1397/4/25 | 1397/4/25 |
| 125 | 5.2.6 | **آماده شدن وبسایت کلی** | 1.38d | 2018-07-10 08:00 | 2018-07-12 11:00 |  |  |  |  | 11.38d | 0.62d |  | 17h |  | 170 |  |  |  |
| 126 | 5.2.6.1 | صفحه ی اول | 8h | 2018-07-10 08:00 | 2018-07-10 17:00 |  |  |  |  | 12d | 0d | kossar | 8h |  | 80 |  | 1397/4/19 | 1397/4/19 |
| 127 | 5.2.6.2 | صفحه تاریخچه و معرفی موسسه | 3h | 2018-07-11 08:00 | 2018-07-11 11:00 | 126 |  |  |  | 12.38d |  | kossar | 3h |  | 30 |  | 1397/4/20 | 1397/4/20 |
| 128 | 5.2.6.3 | صفحه ارتباط با موسسه | 3h | 2018-07-11 11:00 | 2018-07-12 08:20 | 126 |  |  |  | 11.71d |  | kossar | 3h |  | 30 |  | 1397/4/20 | 1397/4/21 |
| 129 | 5.2.6.4 | اطلاع از قوانین و ضوابط سامانه | 3h | 2018-07-12 08:00 | 2018-07-12 11:00 | 126 |  |  |  | 11.38d |  | kossar | 3h |  | 30 |  | 1397/4/21 | 1397/4/21 |

| ID | WBS | Task | Duration | Start | Finish | Predecessors | Total slack | Free slack | Resources | Work | Cost | تاریخ شروع | تاریخ پایان |
| --- | --- | --- | --- | --- | --- | --- | --- | --- | --- | --- | --- | --- | --- |
| 130 | 5.2.7 | **وجود نوع تراکنش ها در سیستم** | 2d | 2018-07-18 08:00 | 2018-07-20 17:00 | 126, 103 | 8.75d | 0d |  | 25h | 250 |  |  |
| 131 | 5.2.7.1 | اضافه شدن مدل تراکنش بر اساس نمودار ER | 8h | 2018-07-18 08:00 | 2018-07-18 17:00 |  | 9d | 0d | parand | 8h | 80 | 1397/4/27 | 1397/4/27 |
| 132 | 5.2.7.2 | صفحه مشاهده یک تراکنش | 5h | 2018-07-20 08:00 | 2018-07-20 14:00 | 131 | 8.12d |  | parand | 5h | 50 | 1397/4/29 | 1397/4/29 |
| 133 | 5.2.7.3 | صفحه لیست تراکنش ها | 3h | 2018-07-20 08:00 | 2018-07-20 17:00 | 131 | 8d |  | parand | 3h | 30 | 1397/4/29 | 1397/4/29 |
| 134 | 5.2.7.4 | اضافه کردن انواع تراکنش ها توسط مدیر | 5h | 2018-07-19 08:00 | 2018-07-19 14:00 | 131 | 9.12d |  | parand | 5h | 50 | 1397/4/28 | 1397/4/28 |
| 135 | 5.2.7.5 | **اضافه کردن نوع تراکنش های معروف** | 0.38d | 2018-07-19 08:00 | 2018-07-19 11:00 |  | 9.38d |  |  | 4h | 40 |  |  |
| 136 | 5.2.7.5.1 | اضافه شدن آزمون های GRE/TOEFL | 1h | 2018-07-19 08:00 | 2018-07-19 09:00 | 131 | 9.38d | 0d | kossar | 1h | 10 | 1397/4/28 | 1397/4/28 |
| 137 | 5.2.7.5.2 | امکان پرداخت هزینه فرم به دانشگاه های خارجی | 1h | 2018-07-19 08:00 | 2018-07-19 09:00 | 131 | 9.38d | 0d | kossar | 1h | 10 | 1397/4/28 | 1397/4/28 |
| 138 | 5.2.7.5.3 | خروجی گرفتن به صورت fixture | 2h | 2018-07-19 09:00 | 2018-07-19 11:00 | 136, 137 | 9.38d |  | kossar | 2h | 20 | 1397/4/28 | 1397/4/28 |
| 139 | 5.2.8 | **انجام تراکنش** | 2d | 2018-07-23 08:00 | 2018-07-27 11:00 | 130, 125 | 8d | 0d |  | 19h | 190 |  |  |
| 140 | 5.2.8.1 | انجام تراکنش توسط کاربر در صفحه تراکنش های وبسایت | 5h | 2018-07-26 08:00 | 2018-07-26 14:00 |  | 8.38d |  | parand | 5h | 50 | 1397/5/4 | 1397/5/4 |
| 141 | 5.2.8.2 | مشاهده لیست تراکنش های انجام شده در پنل ریویو | 8h | 2018-07-23 11:00 | 2018-07-24 17:00 |  | 8.75d |  | parand | 8h | 80 | 1397/5/1 | 1397/5/2 |
| 142 | 5.2.8.3 | مشاهده لیست تراکنش ها در پنل کاربری | 3h | 2018-07-27 08:00 | 2018-07-27 11:00 |  | 8d |  | parand | 3h | 30 | 1397/5/5 | 1397/5/5 |
| 143 | 5.2.8.4 | مشاهده یک تراکنش در پنل ریویو | 3h | 2018-07-23 08:00 | 2018-07-23 11:00 |  | 10d |  | parand | 3h | 30 | 1397/5/1 | 1397/5/1 |
| 144 | 5.2.9 | **امکان پرداخت شخص به شخص** | 0d | 2018-07-30 14:00 | 2018-07-31 14:00 | 125, 139 | 8d |  |  | 8h | 80 |  |  |
| 145 | 5.2.9.1 | صفحه ی پرداخت شخص به شخص | 5h | 2018-07-30 14:00 | 2018-07-31 10:00 |  | 8d | 0d | kossar | 5h | 50 | 1397/5/8 | 1397/5/9 |
| 146 | 5.2.9.2 | ساخت اکانت برای شخصی که داخل سیستم نیست | 3h | 2018-07-31 10:00 | 2018-07-31 14:00 | 145 | 8d |  | kossar | 3h | 30 | 1397/5/9 | 1397/5/9 |
| 147 | 5.2.10 | برداشت از کیف پول و واریز به حساب شخصی | 5h | 2018-07-27 11:00 | 2018-07-27 17:00 | 139, 115 | 8d |  | parand | 5h | 50 | 1397/5/5 | 1397/5/5 |
| 148 | 5.2.11 | **آماده سازی سیستم پیامک** | 2d | 2018-07-09 13:00 | 2018-07-13 11:00 |  | 12d | 4d |  | 7h | 70 |  |  |
| 149 | 5.2.11.1 | آماده سازی کاوه نگار | 2h | 2018-07-09 13:00 | 2018-07-09 15:00 |  | 12d | 0d | soroush | 2h | 20 | 1397/4/18 | 1397/4/18 |
| 150 | 5.2.11.2 | پیاده سازی کتابخانه پیامک | 5h | 2018-07-09 15:00 | 2018-07-13 11:00 | 149 | 12d |  | soroush | 5h | 50 | 1397/4/18 | 1397/4/22 |
| 151 | 5.2.12 | آماده سازی سیستم ایمیل | 5h | 2018-07-09 08:00 | 2018-07-11 14:20 |  | 12.71d | 5.33d | kossar | 5h | 50 | 1397/4/18 | 1397/4/20 |
| 152 | 5.2.13 | **اطلاع رسانی تمامی اتفاقات مربوط به کاربر** | 0.25d | 2018-07-27 11:00 | 2018-08-01 10:00 | 148, 151, 130, 139 | 7.75d |  |  | 15h | 150 |  |  |
| 153 | 5.2.13.1 | ارسال پیامک و ایمیل در مورد تراکنش ها | 5h | 2018-07-31 14:00 | 2018-08-01 10:00 |  | 7.75d |  | kossar | 5h | 50 | 1397/5/9 | 1397/5/10 |
| 154 | 5.2.13.2 | تنظیمات داخل صفحه ی کاربری برای گرفتن پیامک و ایمیل | 5h | 2018-07-30 08:00 | 2018-07-30 14:00 |  | 8d |  | kossar | 5h | 50 | 1397/5/8 | 1397/5/8 |
| 155 | 5.2.13.3 | اطلاع رسانی در ازای اضافه شدن رویداد جدید به سیستم | 5h | 2018-07-27 11:00 | 2018-07-27 17:00 |  | 8d |  | kossar | 5h | 50 | 1397/5/5 | 1397/5/5 |

| ID | WBS | Task | Duration | Start | Finish | Predecessors | Total slack | Free slack | Resources | Work | Cost | تاریخ شروع | تاریخ پایان |
| --- | --- | --- | --- | --- | --- | --- | --- | --- | --- | --- | --- | --- | --- |
| 156 | 5.2.14 | **کتابخانه آگاهساز** | 0d | 2018-07-13 09:00 | 2018-07-16 11:00 | 125 | 12d |  |  | 10h | 100 |  |  |
| 157 | 5.2.14.1 | پیاده سازی کتابخانه آگاه ساز در بک اند | 5h | 2018-07-13 09:00 | 2018-07-16 11:00 |  | 12d |  | parand | 5h | 50 | 1397/4/22 | 1397/4/25 |
| 158 | 5.2.14.2 | پیاده سازی آگاه ساز در کلاینت | 5h | 2018-07-13 14:00 | 2018-07-16 10:00 |  | 12d |  | parand | 5h | 50 | 1397/4/22 | 1397/4/25 |
| 159 | 5.2.15 | **امکان ریویو یک تراکنش** | 0d | 2018-07-27 11:00 | 2018-07-30 11:00 | 139 | 8d | 0d |  | 11h | 110 |  |  |
| 160 | 5.2.15.1 | امکان مشاهده یک تراکنش تنها برای مدیر (کارمند تنها ریویو بکند) | 2h | 2018-07-30 09:00 | 2018-07-30 11:00 | 161 | 8d |  | soroush | 2h | 20 | 1397/5/8 | 1397/5/8 |
| 161 | 5.2.15.2 | امکان رد/تایید یا اسکیپ کردن تراکنش | 3h | 2018-07-27 15:00 | 2018-07-30 09:00 | 162 | 8d | 0d | soroush | 3h | 30 | 1397/5/5 | 1397/5/8 |
| 162 | 5.2.15.3 | انجام محاسبات مالی برای حساب های مختلف | 3h | 2018-07-27 11:00 | 2018-07-27 15:00 |  | 8d | 0d | soroush | 3h | 30 | 1397/5/5 | 1397/5/5 |
| 163 | 5.2.15.4 | fail کردن تمامی تراکنش ها بعد از 24 ساعت | 3h | 2018-07-27 11:00 | 2018-07-27 15:00 |  | 8d |  | soroush | 3h | 30 | 1397/5/5 | 1397/5/5 |
| 164 | 5.2.16 | **اطلاع دادن یک تراکنش به مدیر** | 0d | 2018-07-30 11:00 | 2018-07-30 15:00 | 159 | 8d |  |  | 3h | 30 |  |  |
| 165 | 5.2.16.1 | اطلاع دادن روی صفحه ریویو تراکنش | 2h | 2018-07-30 11:00 | 2018-07-30 14:00 |  | 8d | 0d | soroush | 2h | 20 | 1397/5/8 | 1397/5/8 |
| 166 | 5.2.16.2 | ارسال ایمیل به مدیر | 1h | 2018-07-30 14:00 | 2018-07-30 15:00 | 165 | 8d |  | soroush | 1h | 10 | 1397/5/8 | 1397/5/8 |
| 167 | 5.2.17 | **مشاهده آمار فعالیت یک کارمند** | 0d | 2018-07-30 11:00 | 2018-07-30 17:00 | 159 | 8d |  |  | 5h | 50 |  |  |
| 168 | 5.2.17.1 | مشاهده رد/تاییدها | 3h | 2018-07-30 11:00 | 2018-07-30 15:00 |  | 8d | 0d | parand | 3h | 30 | 1397/5/8 | 1397/5/8 |
| 169 | 5.2.17.2 | مشاهده اسکیپ ها | 2h | 2018-07-30 15:00 | 2018-07-30 17:00 | 168 | 8d |  | parand | 2h | 20 | 1397/5/8 | 1397/5/8 |
| 170 | 5.3 | **آماده سازی سرور** | 0d | 2018-06-25 08:00 | 2018-06-26 10:00 |  | 18d | 17.75d |  | 11h | 110 |  |  |
| 171 | 5.3.1 | تهیه vps | 3h | 2018-06-25 08:00 | 2018-06-25 11:00 |  | 18d | 0d | parand | 3h | 30 | 1397/4/4 | 1397/4/4 |
| 172 | 5.3.2 | آماده سازی اکانت ها و دسترسی های اعضا | 1h | 2018-06-26 09:00 | 2018-06-26 10:00 | 171 | 18d |  | parand | 1h | 10 | 1397/4/5 | 1397/4/5 |
| 173 | 5.3.3 | نصب پکیج های لازم تیم | 3h | 2018-06-25 11:00 | 2018-06-25 15:00 | 171 | 18d | 0d | parand | 3h | 30 | 1397/4/4 | 1397/4/4 |
| 174 | 5.3.4 | **راه اندازی سرویس ایمیل و تست آن** | 0d | 2018-06-25 15:00 | 2018-06-26 10:00 | 173 | 18d |  |  | 4h | 40 |  |  |
| 175 | 5.3.4.1 | راه اندازی smtp و postfix | 3h | 2018-06-25 15:00 | 2018-06-26 09:00 |  | 18d | 0d | parand | 3h | 30 | 1397/4/4 | 1397/4/5 |
| 176 | 5.3.4.2 | ارسال ایمیل تستی | 1h | 2018-06-26 09:00 | 2018-06-26 10:00 | 175 | 18d |  | parand | 1h | 10 | 1397/4/5 | 1397/4/5 |
| 177 | 5.4 | **راه اندازی اولیه بر روی سرور** | 1.75d | 2018-08-23 15:00 | 2018-08-30 12:00 | 170, 102 | 0d |  |  | 28h | 280 |  |  |
| 178 | 5.4.1 | آماده سازی environment و نصب نیازمندی های پروژه | 2h | 2018-08-23 15:00 | 2018-08-23 17:00 |  | 0d |  | soroush | 2h | 20 | 1397/6/1 | 1397/6/1 |
| 179 | 5.4.2 | **راه اندازی gunicorn** | 0.5d | 2018-08-29 08:00 | 2018-08-29 12:00 | 178 | 0d |  | soroush | 4h | 40 |  |  |
| 180 | 5.4.2.1 | راه اندازی و تنظیمات gunicorn در conf پروژه | 3h | 2018-08-29 08:00 | 2018-08-29 11:00 |  | 0d |  |  |  |  | 1397/6/7 | 1397/6/7 |
| 181 | 5.4.2.2 | مستند سازی | 1h | 2018-08-29 11:00 | 2018-08-29 12:00 | 180 | 0d |  |  |  |  | 1397/6/7 | 1397/6/7 |

| ID | WBS | Task | Duration | Start | Finish | Predecessors | Total slack | Constraint | Resources | Work | Cost | تاریخ شروع | تاریخ پایان |
| --- | --- | --- | --- | --- | --- | --- | --- | --- | --- | --- | --- | --- | --- |
| 182 | 5.4.3 | **راه اندازی nginx** | 0d | 2018-08-24 08:00 | 2018-08-27 09:00 | 178 | 0d |  |  | 4h | 40 |  |  |
| 183 | 5.4.3.1 | راه اندازی و تنظیمات nginx در conf پروژه | 3h | 2018-08-24 08:00 | 2018-08-24 11:00 |  | 0d |  | parand | 3h | 30 | 1397/6/2 | 1397/6/2 |
| 184 | 5.4.3.2 | مستند سازی | 1h | 2018-08-27 08:00 | 2018-08-27 09:00 | 183 | 0.38d |  | parand | 1h | 10 | 1397/6/5 | 1397/6/5 |
| 185 | 5.4.4 | **راه اندازی supervisor** | 0d | 2018-08-27 08:00 | 2018-08-28 09:00 | 178 | 0d |  |  | 4h | 40 |  |  |
| 186 | 5.4.4.1 | راه اندازی و تنظیمات supervisor در conf پروژه | 3h | 2018-08-27 08:00 | 2018-08-27 11:00 |  | 0d |  | parand | 3h | 30 | 1397/6/5 | 1397/6/5 |
| 187 | 5.4.4.2 | مستند سازی | 1h | 2018-08-28 08:00 | 2018-08-28 09:00 | 186 | 0.38d |  | parand | 1h | 10 | 1397/6/6 | 1397/6/6 |
| 188 | 5.4.5 | **راه اندازی پایگاه داده** | 0d | 2018-08-24 13:00 | 2018-08-27 10:00 | 178 | 0d |  |  | 6h | 60 |  |  |
| 189 | 5.4.5.1 | راه اندازی و تنظیمات postgresql در conf پروژه | 5h | 2018-08-24 13:00 | 2018-08-27 09:00 |  | 0d |  | soroush | 5h | 50 | 1397/6/2 | 1397/6/5 |
| 190 | 5.4.5.2 | مستند سازی | 1h | 2018-08-27 09:00 | 2018-08-27 10:00 | 189 | 0.38d |  | soroush | 1h | 10 | 1397/6/5 | 1397/6/5 |
| 191 | 5.4.6 | اجرای پروژه | 8h | 2018-08-29 13:00 | 2018-08-30 12:00 | 188, 185, 182, 179 | 0d |  | soroush | 8h | 80 | 1397/6/7 | 1397/6/8 |
| 192 | 5.5 | **تست و گرفتن باگ ها** | 0.5d | 2018-08-30 13:00 | 2018-09-03 12:00 | 177 | 0d |  |  | 17h | 490 | 1397/1/8 | 1397/1/10 |
| 193 | 5.5.1 | رفع باگ های احتمالی | 2d | 2018-08-30 13:00 | 2018-09-03 12:00 |  | 0d |  | team | 16h | 480 | 1397/6/8 | 1397/6/12 |
| 194 | 5.5.2 | راه اندازی سیستم uptime bot | 1h | 2018-08-30 13:00 | 2018-08-30 14:00 |  | 0.38d |  | soroush | 1h | 10 | 1397/6/8 | 1397/6/8 |
| 195 | 5.6 | تحویل نهایی | 9h | 2018-09-03 13:00 | 2018-09-04 14:00 | 192 | 0d | start no earlier than 2018-08-23 08:00 | team | 9h | 270 | 1397/6/12 | 1397/6/13 |
