# WBS-CPS.xml

Schedule from MS Project XML, 2018-02-27 to 2018-08-24, costs in $, A marks actual dates.

## Calendars

- C2: Mon-Tue off; Wed-Thu 08:00-12:00, 13:00-17:00; Fri-Sun off.

## Resources

| Resource | Rate |
| --- | --- |
| parand | 10 |
| soroush | 10 |
| kossar | 10 |
| team | 30 |

## Schedule

| ID | WBS | Task | Type | Duration | Start | Finish | Predecessors | Complete | Remaining | Actual start | Actual finish | Total slack | Resources | Work | Actual work | Cost | Actual cost | تاریخ شروع | تاریخ پایان |
| --- | --- | --- | --- | --- | --- | --- | --- | --- | --- | --- | --- | --- | --- | --- | --- | --- | --- | --- | --- |
| 1 | 1 | **فاز صفر: ارائه پیشنهادنامه** |  | 4.02d | 2018-02-27 08:00 A | 2018-03-04 17:00 |  | 87% | 0.53d |  |  |  |  | 29.17h | 23.17h | 371.67 | 271.67 |  |  |
| 2 | 1.1 | برگزاری جلسه‌ی هم‌فکری | manual | 0.5d | 2018-02-27 08:00 A | 2018-02-27 12:00 |  | 50% | 0.25d |  |  |  | team | 4h | 2h | 120 | 60 | 1396/12/9 | 1396/12/9 |
| 3 | 1.2 | **نگارش پیشنهادنامه** |  | 4d | 2018-02-28 08:00 A | 2018-03-04 17:00 | 2 | 93% | 0.21d |  |  |  |  | 23.5h | 19.5h | 235 | 195 |  |  |
| 4 | 1.2.1 | اهداف و توجیه |  | 0.19d | 2018-02-28 08:00 | 2018-02-28 09:30 |  |  |  |  |  | 1.81d | kossar | 4h |  | 40 |  | 1396/12/9 | 1396/12/9 |
| 5 | 1.2.2 | معرفی و مفاد قرارداد |  | 0.19d | 2018-03-01 08:00 A | 2018-03-01 09:30 A |  | 100% |  |  |  |  | kossar | 1.5h | 1.5h | 15 | 15 | 1396/12/10 | 1396/12/10 |
| 6 | 1.2.3 | **معرفی سیستم و توضیح تکنولوژی** |  | 0d | 2018-03-12 15:30 A | 2018-03-13 13:30 A |  | 100% |  |  |  |  |  | 4.5h | 4.5h | 45 | 45 |  |  |
| 7 | 1.2.3.1 | تهیه گزینه راه‌حل‌های تکنولوژی |  | 0.19d | 2018-03-12 15:30 A | 2018-03-12 17:00 A |  | 100% |  |  |  |  | soroush | 1.5h | 1.5h | 15 | 15 | 1396/12/21 | 1396/12/21 |
| 8 | 1.2.3.2 | امکان سنجی گزینه‌ها |  | 0.25d | 2018-03-12 18:30 A | 2018-03-12 20:30 A | 7 | 100% |  |  |  |  | soroush | 2h | 2h | 20 | 20 | 1396/12/21 | 1396/12/21 |
| 9 | 1.2.3.3 | انتخاب گزینه راه حل نهایی |  | 0.12d | 2018-03-13 11:30 A | 2018-03-13 13:30 A | 8 | 100% |  |  |  |  | soroush | 1h | 1h | 10 | 10 | 1396/12/22 | 1396/12/22 |
| 10 | 1.2.4 | **پوشش نیازمندی‌های کارکردی و غیرکارکردی** |  | 0d | 2018-03-12 15:30 A | 2018-03-12 17:00 A |  | 100% |  |  |  |  |  | 3h | 3h | 30 | 30 |  |  |
| 11 | 1.2.4.1 | نیازمندی‌های کارکردی |  | 0.19d | 2018-03-12 15:30 A | 2018-03-12 17:00 A |  | 100% |  |  |  |  | kossar | 1.5h | 1.5h | 15 | 15 | 1396/12/21 | 1396/12/21 |
| 12 | 1.2.4.2 | نیازمندی‌های غیرکارکردی |  | 0.19d | 2018-03-12 15:30 A | 2018-03-12 17:00 A |  | 100% |  |  |  |  | soroush | 1.5h | 1.5h | 15 | 15 | 1396/12/21 | 1396/12/21 |
| 13 | 1.2.5 | **برآورد زمانی** |  | 0d | 2018-03-12 15:30 A | 2018-03-12 20:30 A |  | 100% |  |  |  |  |  | 2.5h | 2.5h | 25 | 25 |  |  |
| 14 | 1.2.5.1 | برآورد زمانی |  | 0.19d | 2018-03-12 15:30 A | 2018-03-12 17:00 A |  | 100% |  |  |  |  | parand | 1.5h | 1.5h | 15 | 15 | 1396/12/21 | 1396/12/21 |
| 15 | 1.2.5.2 | تحلیل زمانی net present value |  | 0.12d | 2018-03-12 19:30 A | 2018-03-12 20:30 A | 14 | 100% |  |  |  |  | parand | 1h | 1h | 10 | 10 | 1396/12/21 | 1396/12/21 |
| 16 | 1.2.6 | برآورد مالی |  | 0.5d | 2018-03-13 11:30 A | 2018-03-13 16:30 A | 13 | 100% |  |  |  |  | parand | 4h | 4h | 40 | 40 | 1396/12/22 | 1396/12/22 |
| 17 | 1.2.7 | مراحل اجرای پروژه |  | 0.12d | 2018-03-13 11:30 A | 2018-03-13 13:30 A | 13 | 100% |  |  |  |  | soroush | 1h | 1h | 10 | 10 | 1396/12/22 | 1396/12/22 |
| 18 | 1.2.8 | معرفی اعضای گروه |  | 0.19d | 2018-03-12 15:30 A | 2018-03-12 17:00 A |  | 100% |  |  |  |  | parand | 1.5h | 1.5h | 15 | 15 | 1396/12/21 | 1396/12/21 |
| 19 | 1.2.9 | بیان نمرات اضافی |  | 0.19d | 2018-03-12 15:30 A | 2018-03-12 17:00 A |  | 100% |  |  |  |  | parand | 1.5h | 1.5h | 15 | 15 | 1396/12/21 | 1396/12/21 |
| 20 | 1.3 | **ارسال پروپوزال** |  | 0.02d | 2018-03-03 08:00 | 2018-03-04 17:00 | 3 | 100% |  | 2018-03-13 15:30 | 2018-03-14 08:10 |  |  | 1.67h | 1.67h | 16.67 | 16.67 |  |  |
| 21 | 1.3.1 | بازبینی و ویرایش |  | 0.19d | 2018-03-13 15:30 A | 2018-03-13 17:00 A |  | 100% |  |  |  |  | soroush | 1.5h | 1.5h | 15 | 15 | 1396/12/22 | 1396/12/22 |
| 22 | 1.3.2 | ارسال نسخه نهایی |  | 0.02d | 2018-03-13 19:30 A | 2018-03-14 08:10 A | 21 | 100% |  |  |  |  | soroush | 0.17h | 0.17h | 1.67 | 1.67 | 1396/12/22 | 1396/12/23 |
| 23 | 2 | **فاز یک: تحلیل ساختار شکست کار** |  | 4d | 2018-03-05 08:00 A | 2018-03-15 17:00 | 1 | 69% | 1.56d |  |  |  |  | 36.42h | 25.08h | 437.5 | 324.17 |  |  |
| 24 | 2.1 | جلسه هم‌فکری و تقسیم کار |  | 0.46d | 2018-03-05 08:00 A | 2018-03-05 11:40 A |  | 100% |  |  |  |  | team | 3.67h | 3.67h | 110 | 110 | 1396/12/14 | 1396/12/14 |

| ID | WBS | Task | Duration | Start | Finish | Predecessors | Complete | Remaining | Actual start | Actual finish | Total slack | Free slack | Resources | Work | Actual work | Cost | Actual cost | تاریخ شروع | تاریخ پایان |
| --- | --- | --- | --- | --- | --- | --- | --- | --- | --- | --- | --- | --- | --- | --- | --- | --- | --- | --- | --- |
| 25 | 2.2 | **تهیه نسخه اولیه ساختار شکست فاز صفر** | 0.85d | 2018-03-14 11:40 A | 2018-03-15 10:30 A | 24 | 100% |  |  |  |  |  |  | 6.33h | 6.33h | 63.33 | 63.33 |  |  |
| 26 | 2.2.1 | تعیین task های سطح اول | 0.04d | 2018-03-14 11:40 A | 2018-03-14 12:00 A |  | 100% |  |  |  |  |  | kossar | 0.33h | 0.33h | 3.33 | 3.33 | 1396/12/23 | 1396/12/23 |
| 27 | 2.2.2 | تعیین task های سطح دوم | 0.06d | 2018-03-14 12:10 A | 2018-03-14 13:30 A | 26 | 100% |  |  |  |  |  | kossar | 0.5h | 0.5h | 5 | 5 | 1396/12/23 | 1396/12/23 |
| 28 | 2.2.3 | تعیین task های سطح سوم | 0.02d | 2018-03-14 13:00 A | 2018-03-14 13:10 A | 27 | 100% |  |  |  |  |  | kossar | 0.17h | 0.17h | 1.67 | 1.67 | 1396/12/23 | 1396/12/23 |
| 29 | 2.2.4 | تعیین وابستگی‌ها | 0.06d | 2018-03-14 13:10 A | 2018-03-14 13:40 A | 28 | 100% |  |  |  |  |  | soroush | 0.5h | 0.5h | 5 | 5 | 1396/12/23 | 1396/12/23 |
| 30 | 2.2.5 | زمان‌بندی و اختصاص منابع | 0.6d | 2018-03-14 13:40 A | 2018-03-15 10:30 A | 29 | 100% |  |  |  |  |  | parand | 4.83h | 4.83h | 48.33 | 48.33 | 1396/12/23 | 1396/12/24 |
| 31 | 2.3 | **تهیه نسخه اولیه ساختار شکست فاز یک** | 0.93d | 2018-03-14 08:00 | 2018-03-15 17:00 | 24 | 100% |  | 2018-03-14 11:40 | 2018-03-15 11:05 |  |  |  | 6.5h | 6.5h | 65 | 65 |  |  |
| 32 | 2.3.1 | تعیین task های سطح اول | 0.03d | 2018-03-14 11:40 A | 2018-03-14 11:55 A |  | 100% |  |  |  |  |  | kossar | 0.25h | 0.25h | 2.5 | 2.5 | 1396/12/23 | 1396/12/23 |
| 33 | 2.3.2 | تعیین task های سطح دوم | 0.01d | 2018-03-14 11:55 A | 2018-03-14 12:00 A | 32 | 100% |  |  |  |  |  | kossar | 0.08h | 0.08h | 0.83 | 0.83 | 1396/12/23 | 1396/12/23 |
| 34 | 2.3.3 | تعیین task های سطح سوم | 0.02d | 2018-03-14 12:15 A | 2018-03-14 13:10 A | 33 | 100% |  |  |  |  |  | kossar | 0.17h | 0.17h | 1.67 | 1.67 | 1396/12/23 | 1396/12/23 |
| 35 | 2.3.4 | تعیین وابستگی‌ها | 0.06d | 2018-03-14 12:25 A | 2018-03-14 13:30 A | 34 | 100% |  |  |  |  |  | soroush | 0.5h | 0.5h | 5 | 5 | 1396/12/23 | 1396/12/23 |
| 36 | 2.3.5 | زمان‌بندی و اختصاص منابع | 0.69d | 2018-03-14 13:30 A | 2018-03-15 11:05 A | 35 | 100% |  |  |  |  |  | soroush | 5.5h | 5.5h | 55 | 55 | 1396/12/23 | 1396/12/24 |
| 37 | 2.4 | **تهیه نسخه اولیه ساختار شکست فاز دو** | 0.93d | 2018-03-14 11:40 A | 2018-03-15 11:05 A | 24 | 100% |  |  |  |  |  |  | 6.5h | 6.5h | 65 | 65 |  |  |
| 38 | 2.4.1 | تعیین task های سطح اول | 0.03d | 2018-03-14 11:40 A | 2018-03-14 11:55 A |  | 100% |  |  |  |  |  | kossar | 0.25h | 0.25h | 2.5 | 2.5 | 1396/12/23 | 1396/12/23 |
| 39 | 2.4.2 | تعیین task های سطح دوم | 0.01d | 2018-03-14 11:55 A | 2018-03-14 12:00 A | 38 | 100% |  |  |  |  |  | parand | 0.08h | 0.08h | 0.83 | 0.83 | 1396/12/23 | 1396/12/23 |
| 40 | 2.4.3 | تعیین task های سطح سوم | 0.02d | 2018-03-14 12:15 A | 2018-03-14 13:10 A | 39 | 100% |  |  |  |  |  | parand | 0.17h | 0.17h | 1.67 | 1.67 | 1396/12/23 | 1396/12/23 |
| 41 | 2.4.4 | تعیین وابستگی‌ها | 0.06d | 2018-03-14 12:25 A | 2018-03-14 13:30 A | 40 | 100% |  |  |  |  |  | soroush | 0.5h | 0.5h | 5 | 5 | 1396/12/23 | 1396/12/23 |
| 42 | 2.4.5 | زمان‌بندی و اختصاص منابع | 0.69d | 2018-03-14 13:30 A | 2018-03-15 11:05 A | 41 | 100% |  |  |  |  |  | soroush | 5.5h | 5.5h | 55 | 55 | 1396/12/23 | 1396/12/24 |
| 43 | 2.5 | **تهیه نسخه اولیه ساختار شکست فاز سه** | 0.93d | 2018-03-14 11:40 A | 2018-03-15 11:05 | 24 | 15% | 0.79d |  |  | 6.61d |  |  | 6.75h | 1h | 67.5 | 10 |  |  |
| 44 | 2.5.1 | تعیین task های سطح اول | 0.03d | 2018-03-14 11:40 A | 2018-03-14 11:55 A |  | 100% |  |  |  |  |  | parand | 0.25h | 0.25h | 2.5 | 2.5 | 1396/12/23 | 1396/12/23 |
| 45 | 2.5.2 | تعیین task های سطح دوم | 0.02d | 2018-03-14 11:55 A | 2018-03-14 13:05 | 44 | 50% | 0.01d |  |  | 0.01d | 0d | parand | 0.17h | 0.08h | 1.67 | 0.83 | 1396/12/23 | 1396/12/23 |
| 46 | 2.5.3 | تعیین task های سطح سوم | 0.04d | 2018-03-14 12:15 A | 2018-03-14 13:20 | 45 | 50% | 0.02d |  |  | 7.46d |  | parand | 0.33h | 0.17h | 3.33 | 1.67 | 1396/12/23 | 1396/12/23 |
| 47 | 2.5.4 | تعیین وابستگی‌ها | 0.06d | 2018-03-14 12:25 A | 2018-03-14 13:30 A | 46 | 100% |  |  |  |  |  | soroush | 0.5h | 0.5h | 5 | 5 | 1396/12/23 | 1396/12/23 |
| 48 | 2.5.5 | زمان‌بندی و اختصاص منابع | 0.69d | 2018-03-14 13:30 | 2018-03-15 11:05 | 47 |  |  |  |  | 6.61d |  | soroush | 5.5h |  | 55 |  | 1396/12/23 | 1396/12/24 |

| ID | WBS | Task | Type | Duration | Start | Finish | Predecessors | Complete | Remaining | Total slack | Free slack | Constraint | Resources | Work | Actual work | Cost | Actual cost | تاریخ شروع | تاریخ پایان |
| --- | --- | --- | --- | --- | --- | --- | --- | --- | --- | --- | --- | --- | --- | --- | --- | --- | --- | --- | --- |
| 49 | 2.6 | **تهیه نسخه اولیه ساختار شکست فاز چهار** |  | 0.93d | 2018-03-14 11:40 A | 2018-03-15 11:05 | 24 | 16% | 0.78d | 6.61d |  |  |  | 6.67h | 1.08h | 66.67 | 10.83 |  |  |
| 50 | 2.6.1 | تعیین task های سطح اول |  | 0.03d | 2018-03-14 11:40 A | 2018-03-14 11:55 A |  | 100% |  |  |  |  | parand | 0.25h | 0.25h | 2.5 | 2.5 | 1396/12/23 | 1396/12/23 |
| 51 | 2.6.2 | تعیین task های سطح دوم |  | 0.03d | 2018-03-14 11:55 A | 2018-03-14 13:10 | 50 | 67% | 0.01d | 7.48d |  |  | parand | 0.25h | 0.17h | 2.5 | 1.67 | 1396/12/23 | 1396/12/23 |
| 52 | 2.6.3 | تعیین task های سطح سوم |  | 0.02d | 2018-03-14 12:15 A | 2018-03-14 13:10 A | 51 | 100% |  |  |  |  | kossar | 0.17h | 0.17h | 1.67 | 1.67 | 1396/12/23 | 1396/12/23 |
| 53 | 2.6.4 | تعیین وابستگی‌ها |  | 0.06d | 2018-03-14 12:25 A | 2018-03-14 13:30 A | 52 | 100% |  |  |  |  | soroush | 0.5h | 0.5h | 5 | 5 | 1396/12/23 | 1396/12/23 |
| 54 | 2.6.5 | زمان‌بندی و اختصاص منابع |  | 0.69d | 2018-03-14 13:30 | 2018-03-15 11:05 | 53 |  |  | 6.61d |  |  | soroush | 5.5h |  | 55 |  | 1396/12/23 | 1396/12/24 |
| 55 | 3 | **فاز دو: تحلیل اولیه مورد‌های کاربردی و سناریوهای تست‌ها** |  | 7d? | 2018-04-05 08:00 | 2018-04-30 17:00 | 23 |  |  |  |  |  |  | 66.6h |  | 1,086 |  |  |  |
| 56 | 3.1 | جلسه هم‌فکری و تقسیم کار |  | 0.12d | 2018-04-05 08:00 | 2018-04-05 09:00 |  |  |  | 0.88d |  |  | team | 1h |  | 30 |  | 1397/1/16 | 1397/1/16 |
| 57 | 3.2 | **تهیه نسخه اولیه موارد کاربردی** |  | 2d | 2018-04-11 08:00 | 2018-04-19 17:00 | 56 |  |  |  |  |  |  | 25.6h |  | 436 |  |  |  |
| 58 | 3.2.1 | شناسایی actor ها | manual | 1d | 2018-04-12 08:00 | 2018-04-12 17:00 |  |  |  |  |  | start no earlier than 2018-04-12 08:00 | kossar | 8h |  | 80 |  | 1397/1/22 | 1397/1/22 |
| 59 | 3.2.2 | بازنگری و نهایی کردن actorها |  | 0.2d | 2018-04-13 08:00 | 2018-04-13 09:36 | 58 |  |  | 0d | 38d | start no earlier than 2018-04-11 08:00 | parand | 1.6h |  | 16 |  | 1397/1/24 | 1397/1/24 |
| 60 | 3.2.3 | شناسایی موارد کاریردی از روی نیازمندی‌های کاربردی |  | 3d | 2018-04-13 08:00 | 2018-04-17 17:00 | 58 |  |  | 0d |  | start no earlier than 2018-04-13 08:00 | kossar | 24h |  | 240 |  | 1397/1/23 | 1397/1/23 |
| 61 | 3.2.4 | ثبت گرافیکی موارد کاربردی و تهیه usecase diagram |  | 1.25d | 2018-04-19 08:00 | 2018-04-20 10:00 | 60 |  |  | 0d | 38d | start no earlier than 2018-04-18 08:00 | kossar | 10h |  | 100 |  | 1397/1/23 | 1397/1/24 |
| 62 | 3.3 | **تهیه نسخه اولیه سناریوهای تست** |  | 2d | 2018-04-18 08:00 | 2018-04-25 17:00 |  |  |  |  |  |  |  | 36h |  | 520 |  |  |  |
| 63 | 3.3.1 | نوشتن تست اولیه با selenium - آموزشی |  | 0.5d | 2018-04-13 08:00 | 2018-04-13 12:00 |  |  |  | 0d |  | start no earlier than 2018-04-13 08:00 | soroush | 4h |  | 40 |  | 1397/1/29 | 1397/1/29 |
| 64 | 3.3.2 | نوشتن ui اولیه - آموزشی |  | 2d | 2018-04-16 08:00 | 2018-04-17 17:00 |  |  |  | 0d |  | start no earlier than 2018-04-14 08:00 | parand | 16h |  | 160 |  | 1397/1/29 | 1397/1/29 |
| 65 | 3.3.3 | پیاده سازی تست در جنگو با selenium |  | 2d | 2018-04-19 08:00 | 2018-04-20 17:00 | 56, 63 |  |  | 0d | 2d | start no earlier than 2018-04-19 08:00 | soroush | 16h |  | 160 |  | 1397/1/29 | 1397/1/31 |
| 66 | 3.3.4 | پیاده سازی UI |  | 2d | 2018-04-19 08:00 | 2018-04-20 17:00 | 56, 64 |  |  | 0d | 2d |  | parand | 16h |  | 160 |  | 1397/1/30 | 1397/1/30 |
| 67 | 3.4 | **ارسال خروجی** |  | 1.31d | 2018-04-25 08:00 | 2018-04-26 17:00 |  |  |  |  |  |  |  | 4h |  | 100 |  |  |  |
| 68 | 3.4.1 | **بازبینی و ویرایش** |  | 1.19d | 2018-04-25 08:00 | 2018-04-26 09:30 |  |  |  | 0.81d | 0d |  |  | 3h |  | 90 |  |  |  |
| 69 | 3.4.1.1 | بازبینی و ویرایش موارد کاربردی |  | 0.19d | 2018-04-25 08:00 | 2018-04-25 09:30 | 57 |  |  | 1.81d |  |  | team | 1.5h |  | 45 |  | 1397/2/5 | 1397/2/5 |
| 70 | 3.4.1.2 | بازبینی و ویرایش سناریوهای تست |  | 0.19d | 2018-04-26 08:00 | 2018-04-26 09:30 | 62 |  |  | 0.81d |  |  | team | 1.5h |  | 45 |  | 1397/2/6 | 1397/2/6 |
| 71 | 3.4.2 | ارسال |  | 1h | 2018-04-26 09:30 | 2018-04-26 10:30 | 68 |  |  | 0.69d |  |  | soroush | 1h |  | 10 |  | 1397/2/6 | 1397/2/6 |
| 72 | 4 | **فاز سه: تکمیل موردهای کاربردی و سناریوهای تست** |  | 12d | 2018-05-01 08:00 | 2018-06-13 17:00 | 55 |  |  |  |  |  |  | 117h |  | 1,230 |  |  |  |
| 73 | 4.1 | جلسه بررسی بازخورد کارفرما نسبت به موارد کاربردی و سناریوهای تست |  | 0.12d | 2018-05-02 08:00 | 2018-05-02 09:00 |  |  |  | 11.88d | 0d |  |  |  |  |  |  | 1397/2/12 | 1397/2/12 |

| ID | WBS | Task | Duration | Start | Finish | Predecessors | Total slack | Free slack | Constraint | Resources | Work | Cost | تاریخ شروع | تاریخ پایان |
| --- | --- | --- | --- | --- | --- | --- | --- | --- | --- | --- | --- | --- | --- | --- |
| 74 | 4.2 | **بازبینی موارد کاربردی** | 0.38d | 2018-05-02 08:00 | 2018-05-09 17:00 | 73 |  |  |  |  | 9h | 150 |  |  |
| 75 | 4.2.1 | اصلاح موارد مورد اختلاف با کارفرما | 0.38d | 2018-05-02 08:00 | 2018-05-02 11:00 |  | 12.21d |  |  | team | 3h | 90 | 1397/2/12 | 1397/2/12 |
| 76 | 4.2.2 | اضافه کردن موارد جا افتاده | 0.38d | 2018-05-02 08:00 | 2018-05-02 11:00 |  | 12.21d |  |  | kossar | 3h | 30 | 1397/2/12 | 1397/2/12 |
| 77 | 4.2.3 | حذف موارد اضافی | 0.38d | 2018-05-02 08:00 | 2018-05-02 11:00 |  | 12.21d |  |  | parand | 3h | 30 | 1397/2/12 | 1397/2/12 |
| 78 | 4.3 | **بازبینی سناریوهای تست** | 1d | 2018-05-10 08:00 | 2018-05-24 17:00 | 73 |  |  |  |  | 108h | 1,080 |  |  |
| 79 | 4.3.1 | نوشتن تست های مشتری | 2d | 2018-05-10 08:00 | 2018-05-11 17:00 |  | 8.58d |  |  | soroush | 16h | 160 | 1397/2/20 | 1397/2/21 |
| 80 | 4.3.2 | نوشتن تست های مدیر | 3d | 2018-05-10 08:00 | 2018-05-14 17:00 |  | 8.58d |  |  | parand | 24h | 240 | 1397/2/20 | 1397/2/24 |
| 81 | 4.3.3 | نوشتن تست های سیستم | 2d | 2018-05-10 08:00 | 2018-05-11 17:00 |  | 8.58d |  |  | kossar | 16h | 160 | 1397/2/20 | 1397/2/21 |
| 82 | 4.3.4 | نوشتن تست های کارمند | 2d | 2018-05-10 08:00 | 2018-05-11 17:00 |  | 8.58d |  |  | kossar | 16h | 160 | 1397/2/20 | 1397/2/21 |
| 83 | 4.3.5 | طراحی ui پنل مدیر | 2d | 2018-05-10 08:00 | 2018-05-11 17:00 |  | 8.08d | 0d |  | soroush | 16h | 160 | 1397/2/20 | 1397/2/21 |
| 84 | 4.3.6 | طراحی ui پنل مشتری | 2d | 2018-05-10 08:00 | 2018-05-11 17:00 |  | 8.58d |  |  | parand | 16h | 160 | 1397/2/20 | 1397/2/21 |
| 85 | 4.3.7 | طراحی پنل کارمند | 0.5d | 2018-05-14 08:00 | 2018-05-14 12:00 | 83 | 8.08d |  |  | kossar | 4h | 40 | 1397/2/24 | 1397/2/24 |
| 86 | 4.4 | **ویرایش و ارسال** | 0.42d | 2018-05-24 08:00 | 2018-06-07 17:00 | 74, 78 |  |  |  |  |  |  |  |  |
| 87 | 4.4.1 | بازبینی و ویرایش نسخه نهایی موارد کاربردی و سناریوهای تست | 0.38d | 2018-05-24 08:00 | 2018-05-24 11:00 |  | 5.58d | 0d |  |  |  |  | 1397/3/3 | 1397/3/3 |
| 88 | 4.4.2 | ارسال خروجی | 0.04d | 2018-05-24 11:00 | 2018-05-24 11:20 | 87 | 5.58d |  |  |  |  |  | 1397/3/3 | 1397/3/3 |
| 89 | 5 | **فاز چهارم پروژه** | 21d | 2018-06-14 08:00 | 2018-08-24 17:00 | 72 |  |  |  |  | 279h | 3,290 |  |  |
| 90 | 5.1 | **طراحی پایگاه داده** | 1d | 2018-06-14 08:00 | 2018-06-21 17:00 |  |  |  |  |  | 18h | 180 |  |  |
| 91 | 5.1.1 | طراحی پایگاه داده اولیه در قالب ERD | 8h | 2018-06-14 08:00 | 2018-06-14 17:00 |  | 14d | 0d |  | kossar | 8h | 80 | 1397/3/24 | 1397/3/24 |
| 92 | 5.1.2 | جلسه بررسی تطابق طراحی با نیازمندی ها | 2h | 2018-06-15 08:00 | 2018-06-15 10:00 | 91 | 14d | 0d | start no earlier than 2018-03-15 08:00 | parand | 2h | 20 | 1397/3/25 | 1397/3/25 |
| 93 | 5.1.3 | طراحی مجدد جداول براساس فیدبک جلسه تطابق | 5h | 2018-06-15 10:00 | 2018-06-15 16:00 | 92 | 14d | 0d |  | kossar | 5h | 50 | 1397/3/25 | 1397/3/25 |
| 94 | 5.1.4 | نرمال سازی جداول تا 3nf | 3h | 2018-06-15 16:00 | 2018-06-18 10:00 | 93 | 14d |  |  | parand | 3h | 30 | 1397/3/25 | 1397/3/28 |
| 95 | 5.2 | **پیاده سازی** | 2.88d | 2018-06-22 08:00 | 2018-08-01 17:00 | 90 |  |  |  |  | 196h | 1,960 |  |  |
| 96 | 5.2.1 | **امکان ثبت نام/ورود/خروج در سیستم** | 1.62d | 2018-06-27 08:00 | 2018-06-28 14:00 | 90 | 12.12d | 0d |  |  | 13h | 130 |  |  |
| 97 | 5.2.1.1 | آماده شدن مدل اولیه کاربر طبق نمودار ER | 3h | 2018-06-27 08:00 | 2018-06-27 11:00 |  | 12.12d | 0d |  |  |  |  | 1397/4/6 | 1397/4/6 |
| 98 | 5.2.1.2 | امکان ثبت نام | 5h | 2018-06-27 11:00 | 2018-06-27 17:00 | 97 | 12.12d | 0d |  | soroush | 5h | 50 | 1397/4/6 | 1397/4/6 |
| 99 | 5.2.1.3 | امکان مشاهده اطلاعات شخصی خود در پنل شخصی | 3h | 2018-06-27 11:00 | 2018-06-27 15:00 | 97 | 13d |  |  | soroush | 3h | 30 | 1397/4/6 | 1397/4/6 |
| 100 | 5.2.1.4 | امکان ورود به سیستم | 3h | 2018-06-28 08:00 | 2018-06-28 11:00 | 98 | 12.12d | 0d |  | soroush | 3h | 30 | 1397/4/7 | 1397/4/7 |
| 101 | 5.2.1.5 | امکان خروج از سیستم | 2h | 2018-06-28 11:00 | 2018-06-28 14:00 | 100 | 12.12d |  |  | soroush | 2h | 20 | 1397/4/7 | 1397/4/7 |
| 102 | 5.2.2 | امکان ویرایش اطلاعات شخصی توسط کاربر | 5h | 2018-06-28 14:00 | 2018-06-29 10:00 | 96 | 12.75d |  |  | kossar | 5h | 50 | 1397/4/7 | 1397/4/8 |

| ID | WBS | Task | Duration | Start | Finish | Predecessors | Total slack | Free slack | Resources | Work | Cost | تاریخ شروع | تاریخ پایان |
| --- | --- | --- | --- | --- | --- | --- | --- | --- | --- | --- | --- | --- | --- |
| 103 | 5.2.3 | **مدیریت اعضای سامانه در پنل مدیریت** | 1.38d | 2018-06-27 11:00 | 2018-06-28 15:00 | 97 | 13.25d |  |  | 12h | 120 |  |  |
| 104 | 5.2.3.1 | اضافه کردن کارمند توسط مدیر | 1h | 2018-06-27 11:00 | 2018-06-27 12:00 |  | 14.5d |  | parand | 1h | 10 | 1397/4/6 | 1397/4/6 |
| 105 | 5.2.3.2 | مشاهده کاربران بر اساس سطح دسترسی | 5h | 2018-06-27 11:00 | 2018-06-27 17:00 |  | 13.25d | 0d | parand | 5h | 50 | 1397/4/6 | 1397/4/6 |
| 106 | 5.2.3.3 | مشاهده اطلاعات شخصی یک کاربر در پنل ریویو | 3h | 2018-06-28 08:00 | 2018-06-28 11:00 | 105 | 13.25d | 0d | parand | 3h | 30 | 1397/4/7 | 1397/4/7 |
| 107 | 5.2.3.4 | امکان مسدود کردن کاربران سیستم | 3h | 2018-06-28 11:00 | 2018-06-28 15:00 | 106 | 13.25d |  | parand | 3h | 30 | 1397/4/7 | 1397/4/7 |
| 108 | 5.2.4 | **ساخت کیف پول برای اعضای سیستم** | 1d | 2018-06-28 08:00 | 2018-06-29 11:00 | 98 | 12d | 0d |  | 18h | 180 |  |  |
| 109 | 5.2.4.1 | اضافه شدن مدل های کیف پول بر نمودار جدول ER | 5h | 2018-06-28 08:00 | 2018-06-28 14:00 |  | 12.38d | 0d | soroush | 5h | 50 | 1397/4/7 | 1397/4/7 |
| 110 | 5.2.4.2 | ساخته شدن کیف پول به هنگام ثبت نام کاربر | 3h | 2018-06-28 14:00 | 2018-06-28 17:00 | 109 | 12d | 0d | soroush | 3h | 30 | 1397/4/7 | 1397/4/7 |
| 111 | 5.2.4.3 | امکان اضافه کردن مبلغ به حساب ریالی به صورت دستی | 2h | 2018-06-29 08:00 | 2018-06-29 10:00 | 110 | 12d |  | soroush | 2h | 20 | 1397/4/8 | 1397/4/8 |
| 112 | 5.2.4.4 | مشاهده اعتبار کیف پول ها در پروفایل کاربری | 3h | 2018-06-29 08:00 | 2018-06-29 11:00 | 110 | 12d |  | soroush | 3h | 30 | 1397/4/8 | 1397/4/8 |
| 113 | 5.2.4.5 | مشاهده اعتبار کیف پول ها در مدیریت | 2h | 2018-06-29 08:00 | 2018-06-29 10:00 | 110 | 12d |  | soroush | 2h | 20 | 1397/4/8 | 1397/4/8 |
| 114 | 5.2.4.6 | ساخت کیف پول های موسسه | 3h | 2018-06-28 14:00 | 2018-06-28 17:00 | 109 | 12d |  | soroush | 3h | 30 | 1397/4/7 | 1397/4/7 |
| 115 | 5.2.5 | **انتقال اعتبار میان کیف پول ها** | 0d | 2018-06-29 11:00 | 2018-07-02 15:00 | 108 | 12d |  |  | 11h | 110 |  |  |
| 116 | 5.2.5.1 | صفحه انتقال اعتبار میان کیف پول ها | 8h | 2018-06-29 11:00 | 2018-07-02 11:00 |  | 12d | 0d | soroush | 8h | 80 | 1397/4/8 | 1397/4/11 |
| 117 | 5.2.5.2 | محاسبه کارمزد انقال ها و اضافه شدن به حساب موسسه | 3h | 2018-07-02 11:00 | 2018-07-02 15:00 | 116 | 12.62d |  | soroush | 3h | 30 | 1397/4/11 | 1397/4/11 |
| 118 | 5.2.6 | **آماده شدن وبسایت کلی** | 0d | 2018-06-22 08:00 | 2018-06-25 11:00 |  | 12.75d | 0d |  | 17h | 170 |  |  |
| 119 | 5.2.6.1 | صفحه ی اول | 8h | 2018-06-22 08:00 | 2018-06-22 17:00 |  | 12.75d | 0d | kossar | 8h | 80 | 1397/4/1 | 1397/4/1 |
| 120 | 5.2.6.2 | صفحه تاریخچه و معرفی موسسه | 3h | 2018-06-25 08:00 | 2018-06-25 11:00 | 119 | 14d |  | kossar | 3h | 30 | 1397/4/4 | 1397/4/4 |
| 121 | 5.2.6.3 | صفحه ارتباط با موسسه | 3h | 2018-06-25 08:00 | 2018-06-25 11:00 | 119 | 14d |  | kossar | 3h | 30 | 1397/4/4 | 1397/4/4 |
| 122 | 5.2.6.4 | اطلاع از قوانین و ضوابط سامانه | 3h | 2018-06-25 08:00 | 2018-06-25 11:00 | 119 | 14d |  | kossar | 3h | 30 | 1397/4/4 | 1397/4/4 |
| 123 | 5.2.7 | **وجود نوع تراکنش ها در سیستم** | 0.38d | 2018-06-28 14:00 | 2018-07-02 10:00 | 119, 96 | 12d | 0d |  | 25h | 250 |  |  |
| 124 | 5.2.7.1 | اضافه شدن مدل تراکنش بر اساس نمودار ER | 8h | 2018-06-28 14:00 | 2018-06-29 14:00 |  | 12d | 0d | parand | 8h | 80 | 1397/4/7 | 1397/4/8 |
| 125 | 5.2.7.2 | صفحه مشاهده یک تراکنش | 5h | 2018-06-29 14:00 | 2018-07-02 10:00 | 124 | 12d |  | parand | 5h | 50 | 1397/4/8 | 1397/4/11 |
| 126 | 5.2.7.3 | صفحه لیست تراکنش ها | 3h | 2018-06-29 14:00 | 2018-06-29 17:00 | 124 | 12d |  | parand | 3h | 30 | 1397/4/8 | 1397/4/8 |
| 127 | 5.2.7.4 | اضافه کردن انواع تراکنش ها توسط مدیر | 5h | 2018-06-29 14:00 | 2018-07-02 10:00 | 124 | 12d |  | parand | 5h | 50 | 1397/4/8 | 1397/4/11 |

| ID | WBS | Task | Duration | Start | Finish | Predecessors | Total slack | Free slack | Resources | Work | Cost | تاریخ شروع | تاریخ پایان |
| --- | --- | --- | --- | --- | --- | --- | --- | --- | --- | --- | --- | --- | --- |
| 128 | 5.2.7.5 | **اضافه کردن نوع تراکنش های معروف** | 0d | 2018-06-29 14:00 | 2018-06-29 17:00 |  | 12d |  |  | 4h | 40 |  |  |
| 129 | 5.2.7.5.1 | اضافه شدن آزمون های GRE/TOEFL | 1h | 2018-06-29 14:00 | 2018-06-29 15:00 | 124 | 12d | 0d | kossar | 1h | 10 | 1397/4/8 | 1397/4/8 |
| 130 | 5.2.7.5.2 | امکان پرداخت هزینه فرم به دانشگاه های خارجی | 1h | 2018-06-29 14:00 | 2018-06-29 15:00 | 124 | 12d | 0d | kossar | 1h | 10 | 1397/4/8 | 1397/4/8 |
| 131 | 5.2.7.5.3 | خروجی گرفتن به صورت fixture | 2h | 2018-06-29 15:00 | 2018-06-29 17:00 | 129, 130 | 12d |  | kossar | 2h | 20 | 1397/4/8 | 1397/4/8 |
| 132 | 5.2.8 | **انجام تراکنش** | 0d | 2018-07-02 10:00 | 2018-07-03 10:00 | 123, 118 | 12d | 0d |  | 19h | 190 |  |  |
| 133 | 5.2.8.1 | انجام تراکنش توسط کاربر در صفحه تراکنش های وبسایت | 5h | 2018-07-02 10:00 | 2018-07-02 16:00 |  | 12d |  | parand | 5h | 50 | 1397/4/11 | 1397/4/11 |
| 134 | 5.2.8.2 | مشاهده لیست تراکنش های انجام شده در پنل ریویو | 8h | 2018-07-02 10:00 | 2018-07-03 10:00 |  | 12d |  | parand | 8h | 80 | 1397/4/11 | 1397/4/12 |
| 135 | 5.2.8.3 | مشاهده لیست تراکنش ها در پنل کاربری | 3h | 2018-07-02 10:00 | 2018-07-02 14:00 |  | 12d |  | parand | 3h | 30 | 1397/4/11 | 1397/4/11 |
| 136 | 5.2.8.4 | مشاهده یک تراکنش در پنل ریویو | 3h | 2018-07-02 10:00 | 2018-07-02 14:00 |  | 12d |  | parand | 3h | 30 | 1397/4/11 | 1397/4/11 |
| 137 | 5.2.9 | **امکان پرداخت شخص به شخص** | 0.25d | 2018-07-03 10:00 | 2018-07-04 10:00 | 118, 132 | 12d |  |  | 8h | 80 |  |  |
| 138 | 5.2.9.1 | صفحه ی پرداخت شخص به شخص | 5h | 2018-07-03 10:00 | 2018-07-03 16:00 |  | 12d | 0d | kossar | 5h | 50 | 1397/4/12 | 1397/4/12 |
| 139 | 5.2.9.2 | ساخت اکانت برای شخصی که داخل سیستم نیست | 3h | 2018-07-03 16:00 | 2018-07-04 10:00 | 138 | 12.62d |  | kossar | 3h | 30 | 1397/4/12 | 1397/4/13 |
| 140 | 5.2.10 | برداشت از کیف پول و واریز به حساب شخصی | 5h | 2018-07-03 10:00 | 2018-07-03 16:00 | 132, 108 | 12.38d |  | parand | 5h | 50 | 1397/4/12 | 1397/4/12 |
| 141 | 5.2.11 | **آماده سازی سیستم پیامک** | 0d | 2018-06-22 08:00 | 2018-06-22 16:00 |  | 14d | 2d |  | 7h | 70 |  |  |
| 142 | 5.2.11.1 | آماده سازی کاوه نگار | 2h | 2018-06-22 08:00 | 2018-06-22 10:00 |  | 14d | 0d | soroush | 2h | 20 | 1397/4/1 | 1397/4/1 |
| 143 | 5.2.11.2 | پیاده سازی کتابخانه پیامک | 5h | 2018-06-22 10:00 | 2018-06-22 16:00 | 142 | 14d |  | soroush | 5h | 50 | 1397/4/1 | 1397/4/1 |
| 144 | 5.2.12 | آماده سازی سیستم ایمیل | 5h | 2018-06-22 08:00 | 2018-06-22 14:00 |  | 14d | 2d | kossar | 5h | 50 | 1397/4/1 | 1397/4/1 |
| 145 | 5.2.13 | **اطلاع رسانی تمامی اتفاقات مربوط به کاربر** | 0d | 2018-07-03 10:00 | 2018-07-03 16:00 | 141, 144, 123, 132 | 12.38d |  |  | 15h | 150 |  |  |
| 146 | 5.2.13.1 | ارسال پیامک و ایمیل در مورد تراکنش ها | 5h | 2018-07-03 10:00 | 2018-07-03 16:00 |  | 12.38d |  | kossar | 5h | 50 | 1397/4/12 | 1397/4/12 |
| 147 | 5.2.13.2 | تنظیمات داخل صفحه ی کاربری برای گرفتن پیامک و ایمیل | 5h | 2018-07-03 10:00 | 2018-07-03 16:00 |  | 12.38d |  | kossar | 5h | 50 | 1397/4/12 | 1397/4/12 |
| 148 | 5.2.13.3 | اطلاع رسانی در ازای اضافه شدن رویداد جدید به سیستم | 5h | 2018-07-03 10:00 | 2018-07-03 16:00 |  | 12.38d |  | kossar | 5h | 50 | 1397/4/12 | 1397/4/12 |
| 149 | 5.2.14 | **کتابخانه آگاهساز** | 0d | 2018-06-25 11:00 | 2018-06-25 17:00 | 118 | 14.38d |  |  | 10h | 100 |  |  |
| 150 | 5.2.14.1 | پیاده سازی کتابخانه آگاه ساز در بک اند | 5h | 2018-06-25 11:00 | 2018-06-25 17:00 |  | 14.38d |  | parand | 5h | 50 | 1397/4/4 | 1397/4/4 |
| 151 | 5.2.14.2 | پیاده سازی آگاه ساز در کلاینت | 5h | 2018-06-25 11:00 | 2018-06-25 17:00 |  | 14.38d |  | parand | 5h | 50 | 1397/4/4 | 1397/4/4 |

| ID | WBS | Task | Duration | Start | Finish | Predecessors | Total slack | Free slack | Resources | Work | Cost | تاریخ شروع | تاریخ پایان |
| --- | --- | --- | --- | --- | --- | --- | --- | --- | --- | --- | --- | --- | --- |
| 152 | 5.2.15 | **امکان ریویو یک تراکنش** | 0.25d | 2018-07-03 10:00 | 2018-07-04 10:00 | 132 | 12d | 0d |  | 11h | 110 |  |  |
| 153 | 5.2.15.1 | امکان مشاهده یک تراکنش تنها برای مدیر (کارمند تنها ریویو بکند) | 2h | 2018-07-04 08:00 | 2018-07-04 10:00 | 154 | 12.12d |  | soroush | 2h | 20 | 1397/4/13 | 1397/4/13 |
| 154 | 5.2.15.2 | امکان رد/تایید یا اسکیپ کردن تراکنش | 3h | 2018-07-03 14:00 | 2018-07-03 17:00 | 155 | 12d | 0d | soroush | 3h | 30 | 1397/4/12 | 1397/4/12 |
| 155 | 5.2.15.3 | انجام محاسبات مالی برای حساب های مختلف | 3h | 2018-07-03 10:00 | 2018-07-03 14:00 |  | 12d | 0d | soroush | 3h | 30 | 1397/4/12 | 1397/4/12 |
| 156 | 5.2.15.4 | fail کردن تمامی تراکنش ها بعد از 24 ساعت | 3h | 2018-07-03 10:00 | 2018-07-03 14:00 |  | 12d |  | soroush | 3h | 30 | 1397/4/12 | 1397/4/12 |
| 157 | 5.2.16 | **اطلاع دادن یک تراکنش به مدیر** | 0.38d | 2018-07-04 10:00 | 2018-07-04 14:00 | 152 | 12.38d |  |  | 3h | 30 |  |  |
| 158 | 5.2.16.1 | اطلاع دادن روی صفحه ریویو تراکنش | 2h | 2018-07-04 10:00 | 2018-07-04 12:00 |  | 12.38d | 0d | soroush | 2h | 20 | 1397/4/13 | 1397/4/13 |
| 159 | 5.2.16.2 | ارسال ایمیل به مدیر | 1h | 2018-07-04 13:00 | 2018-07-04 14:00 | 158 | 12.38d |  | soroush | 1h | 10 | 1397/4/13 | 1397/4/13 |
| 160 | 5.2.17 | **مشاهده آمار فعالیت یک کارمند** | 0.62d | 2018-07-04 10:00 | 2018-07-04 16:00 | 152 | 12.12d |  |  | 5h | 50 |  |  |
| 161 | 5.2.17.1 | مشاهده رد/تاییدها | 3h | 2018-07-04 10:00 | 2018-07-04 14:00 |  | 12.12d | 0d | parand | 3h | 30 | 1397/4/13 | 1397/4/13 |
| 162 | 5.2.17.2 | مشاهده اسکیپ ها | 2h | 2018-07-04 14:00 | 2018-07-04 16:00 | 161 | 12.12d |  | parand | 2h | 20 | 1397/4/13 | 1397/4/13 |
| 163 | 5.2.18 | **گرفتن نرخ لحظه ای ارز** | 0d | 2018-06-22 08:00 | 2018-06-25 14:00 |  | 14.38d |  |  | 7h | 70 |  |  |
| 164 | 5.2.18.1 | ذخیره سازی نرخ ارز به صورت دقیقه ای | 5h | 2018-06-22 08:00 | 2018-06-22 14:00 |  | 14.38d |  | kossar | 5h | 50 | 1397/4/1 | 1397/4/1 |
| 165 | 5.2.18.2 | مشاهده نرخ لحظه ای ارز در وبسایت | 2h | 2018-06-25 11:00 | 2018-06-25 14:00 | 118 | 14.75d |  | kossar | 2h | 20 | 1397/4/4 | 1397/4/4 |
| 166 | 5.3 | **آماده سازی سرور** | 1.25d | 2018-08-01 08:00 | 2018-08-02 17:00 |  |  |  |  | 11h | 110 |  |  |
| 167 | 5.3.1 | تهیه vps | 3h | 2018-08-01 08:00 | 2018-08-01 11:00 |  | 3.75d | 0d | parand | 3h | 30 | 1397/5/10 | 1397/5/10 |
| 168 | 5.3.2 | آماده سازی اکانت ها و دسترسی های اعضا | 1h | 2018-08-01 11:00 | 2018-08-01 12:00 | 167 | 4.5d |  | parand | 1h | 10 | 1397/5/10 | 1397/5/10 |
| 169 | 5.3.3 | نصب پکیج های لازم تیم | 3h | 2018-08-01 11:00 | 2018-08-01 15:00 | 167 | 3.75d | 0d | parand | 3h | 30 | 1397/5/10 | 1397/5/10 |
| 170 | 5.3.4 | **راه اندازی سرویس ایمیل و تست آن** | 0.5d | 2018-08-01 15:00 | 2018-08-02 10:00 | 169 | 3.75d |  |  | 4h | 40 |  |  |
| 171 | 5.3.4.1 | راه اندازی smtp و postfix | 3h | 2018-08-01 15:00 | 2018-08-02 09:00 |  | 3.75d | 0d | parand | 3h | 30 | 1397/5/10 | 1397/5/11 |
| 172 | 5.3.4.2 | ارسال ایمیل تستی | 1h | 2018-08-02 09:00 | 2018-08-02 10:00 | 171 | 3.75d |  | parand | 1h | 10 | 1397/5/11 | 1397/5/11 |
| 173 | 5.4 | **راه اندازی اولیه بر روی سرور** | 2d | 2018-08-08 08:00 | 2018-08-09 17:00 | 166, 95 |  |  |  | 28h | 280 |  |  |
| 174 | 5.4.1 | آماده سازی environment و نصب نیازمندی های پروژه | 2h | 2018-08-08 08:00 | 2018-08-08 10:00 |  | 3d | 0d | soroush | 2h | 20 | 1397/5/17 | 1397/5/17 |
| 175 | 5.4.2 | **راه اندازی gunicorn** | 0.5d | 2018-08-08 10:00 | 2018-08-08 15:00 | 174 | 3.25d | 0.25d | soroush | 4h | 40 |  |  |
| 176 | 5.4.2.1 | راه اندازی و تنظیمات gunicorn در conf پروژه | 3h | 2018-08-08 10:00 | 2018-08-08 14:00 |  | 3.25d | 0d |  |  |  | 1397/5/17 | 1397/5/17 |
| 177 | 5.4.2.2 | مستند سازی | 1h | 2018-08-08 14:00 | 2018-08-08 15:00 | 176 | 3.25d |  |  |  |  | 1397/5/17 | 1397/5/17 |

| ID | WBS | Task | Duration | Start | Finish | Predecessors | Total slack | Free slack | Constraint | Resources | Work | Cost | تاریخ شروع | تاریخ پایان |
| --- | --- | --- | --- | --- | --- | --- | --- | --- | --- | --- | --- | --- | --- | --- |
| 178 | 5.4.3 | **راه اندازی nginx** | 0.5d | 2018-08-08 10:00 | 2018-08-08 15:00 | 174 | 3.25d | 0.25d |  | soroush | 4h | 40 |  |  |
| 179 | 5.4.3.1 | راه اندازی و تنظیمات nginx در conf پروژه | 3h | 2018-08-08 10:00 | 2018-08-08 14:00 |  | 3.25d | 0d |  |  |  |  | 1397/5/17 | 1397/5/17 |
| 180 | 5.4.3.2 | مستند سازی | 1h | 2018-08-08 14:00 | 2018-08-08 15:00 | 179 | 3.25d |  |  |  |  |  | 1397/5/17 | 1397/5/17 |
| 181 | 5.4.4 | **راه اندازی supervisor** | 0.5d | 2018-08-08 10:00 | 2018-08-08 15:00 | 174 | 3.25d | 0.25d |  | soroush | 4h | 40 |  |  |
| 182 | 5.4.4.1 | راه اندازی و تنظیمات supervisor در conf پروژه | 3h | 2018-08-08 10:00 | 2018-08-08 14:00 |  | 3.25d | 0d |  |  |  |  | 1397/5/17 | 1397/5/17 |
| 183 | 5.4.4.2 | مستند سازی | 1h | 2018-08-08 14:00 | 2018-08-08 15:00 | 182 | 3.25d |  |  |  |  |  | 1397/5/17 | 1397/5/17 |
| 184 | 5.4.5 | **راه اندازی پایگاه داده** | 0.75d | 2018-08-08 10:00 | 2018-08-08 17:00 | 174 | 3d | 0d |  | soroush | 6h | 60 |  |  |
| 185 | 5.4.5.1 | راه اندازی و تنظیمات postgresql در conf پروژه | 5h | 2018-08-08 10:00 | 2018-08-08 16:00 |  | 3d | 0d |  |  |  |  | 1397/5/17 | 1397/5/17 |
| 186 | 5.4.5.2 | مستند سازی | 1h | 2018-08-08 16:00 | 2018-08-08 17:00 | 185 | 3d |  |  |  |  |  | 1397/5/17 | 1397/5/17 |
| 187 | 5.4.6 | اجرای پروژه | 8h | 2018-08-09 08:00 | 2018-08-09 17:00 | 184, 181, 178, 175 | 2d |  |  | soroush | 8h | 80 | 1397/5/18 | 1397/5/18 |
| 188 | 5.5 | **تست و گرفتن باگ ها** | 2d | 2018-08-15 08:00 | 2018-08-16 17:00 | 173 |  |  |  |  | 17h | 490 | 1397/1/8 | 1397/1/10 |
| 189 | 5.5.1 | رفع باگ های احتمالی | 2d | 2018-08-15 08:00 | 2018-08-16 17:00 |  | 1.88d |  |  | team | 16h | 480 | 1397/5/24 | 1397/5/25 |
| 190 | 5.5.2 | راه اندازی سیستم uptime bot | 1h | 2018-08-15 08:00 | 2018-08-15 09:00 |  | 3.75d |  |  | soroush | 1h | 10 | 1397/5/24 | 1397/5/24 |
| 191 | 5.6 | تحویل نهایی | 9h | 2018-08-23 08:00 | 2018-08-24 09:00 | 188 | 0d |  | start no earlier than 2018-08-23 08:00 | team | 9h | 270 | 1397/6/1 | 1397/6/2 |
